# IST645S18A2BJairajR

Schedule from MS Project, 2018-02-01 to 2019-01-31, 5 hours a day, costs in $.

## Calendars

- Standard: Mon-Fri 08:00-12:00, 13:00-17:00; Sat-Sun off. Exceptions (off unless hours are given): 2018-05-28 (Memorial Day, recurring), 2018-09-03 (Labor Day, recurring), 2018-11-22 (Thanksgiving), 2018-12-24 (Christmas), 2018-12-31 to 2019-01-01 (New Year, recurring).

## Resources

| Resource | Group | Rate | Cost per use |
| --- | --- | --- | --- |
| Initial Payment to Sight Machine | Payment |  | 10000 |
| CNC Machine Sensor Installation Payment 1 | Payment |  | 11000 |
| CNC Machine Sensor Installation Payment 2 | Payment |  | 11000 |
| CNC Machine Sensor Installation Payment 3 | Payment |  | 12000 |
| Sight Machine Software Contract | Payment |  | 3500 |
| Sight Machine Cloud Contract | Payment |  | 1725 |
| Sight Machine Training | Payment |  | 17300 |
| UAT Signoff Payment | Payment |  | 7500 |
| Chris Dobbrow | Sight Machine |  |  |
| Kurt DeMaagd | Sight Machine |  |  |
| Ryan Smith | Sight Machine |  |  |
| Curtis Kellman | Sight Machine |  |  |
| Ray Bellman | Nolte Maufacturing | 27.5 |  |
| Doug Coster | Nolte Maufacturing |  |  |
| Greg Harrison | Nolte Maufacturing |  |  |
| Norma Wilson | Nolte Maufacturing |  |  |
| Mat Jackson | Nolte Maufacturing |  |  |
| Rahul Jairaj | Nolte Maufacturing | 38 |  |
| Lamont Wilson | Nolte Maufacturing | 40 |  |
| June Presten | Nolte Maufacturing | 48 |  |
| Krishnanand Naik | Nolte Maufacturing | 37 |  |
| Yi Wang | Nolte Maufacturing | 32 |  |
| Mary Gibson | Nolte Maufacturing | 48 |  |
| Christina Kutty | Nolte Maufacturing | 46 |  |
| Paul Johnson | Nolte Maufacturing | 39 |  |

## Schedule

| ID | WBS | Task | Duration | Start | Finish | Predecessors | Total slack | Free slack | Resources | Work | Cost |
| --- | --- | --- | --- | --- | --- | --- | --- | --- | --- | --- | --- |
| 1 | 1 | **Initiation** | 3.2d | 2018-02-01 10:00 | 2018-02-05 10:00 |  | 197.85d |  |  | 102h | 1,971.5 |
| 2 | 1.1 | **Strategize and apply for project** | 1.8d | 2018-02-01 10:00 | 2018-02-02 11:00 |  | 197.85d |  |  | 37h | 424.5 |
| 3 | 1.1.1 | Set goals for project and develop strategy for execution | 0.6d | 2018-02-01 10:00 | 2018-02-01 14:00 |  | 200.27d | 0d | Rahul Jairaj; Norma Wilson; Doug Coster | 9h | 114 |
| 4 | 1.1.2 | Fill out the initial work request form | 0.4d | 2018-02-01 14:00 | 2018-02-01 16:00 | 3 | 200.27d | 0d | Rahul Jairaj | 2h | 76 |
| 5 | 1.1.3 | Receive approval for work request form | 0.2d | 2018-02-01 16:00 | 2018-02-01 17:00 | 4 | 200.27d | 0d | Rahul Jairaj; Greg Harrison | 2h | 38 |
| 6 | 1.1.4 | Get briefed by Sight Machine on all services offered | 0.6d | 2018-02-02 08:00 | 2018-02-02 11:00 | 5 | 408d |  | Rahul Jairaj; Mat Jackson; Norma Wilson; Ray Bellman; Chris Dobbrow; Kurt DeMaagd; Ryan Smith; Curtis Kellman | 24h | 196.5 |
| 7 | 1.2 | **Drafting project charter/scope document** | 0.8d | 2018-02-02 08:00 | 2018-02-02 12:00 |  | 197.85d |  |  | 46h | 1,243 |
| 8 | 1.2.1 | Develop a business case for the project | 0.6d | 2018-02-02 08:00 | 2018-02-02 11:00 | 5 | 200.27d | 0d | Rahul Jairaj; Norma Wilson | 6h | 114 |
| 9 | 1.2.2 | List process and project deliverables to be produced | 0.4d | 2018-02-02 08:00 | 2018-02-02 10:00 | 8SS | 200.27d | 0d | Rahul Jairaj; Ray Bellman; Lamont Wilson; June Presten; Krishnanand Naik | 10h | 381 |
| 10 | 1.2.3 | Identify all the major stakeholders | 0.4d | 2018-02-02 08:00 | 2018-02-02 10:00 | 8SS | 408.2d | 0d | Rahul Jairaj | 2h | 76 |
| 11 | 1.2.4 | Obtain major stakeholders' input on the project | 0.4d | 2018-02-02 08:00 | 2018-02-02 10:00 | 10SS | 408.2d | 0d | Rahul Jairaj; Norma Wilson; Greg Harrison; Doug Coster; Mat Jackson; Lamont Wilson; June Presten; Mary Gibson | 16h | 348 |
| 12 | 1.2.5 | Establish major milestones and tentative dates for them | 0.4d | 2018-02-02 10:00 | 2018-02-02 12:00 | 9 | 407.8d |  | Rahul Jairaj | 2h | 76 |
| 13 | 1.2.6 | Analyze at a high level risks to the project | 0.4d | 2018-02-02 08:00 | 2018-02-02 10:00 | 11SS | 408.2d |  | Norma Wilson; Mat Jackson; Lamont Wilson; Christina Kutty; Rahul Jairaj | 10h | 248 |
| 14 | 1.3 | Receive approval for charter/scope document | 0.4d | 2018-02-02 10:00 | 2018-02-02 12:00 | 9 | 200.27d | 0d | Rahul Jairaj; Doug Coster; Greg Harrison | 6h | 76 |
| 15 | 1.4 | **Draw a contract** | 1.2d | 2018-02-02 13:00 | 2018-02-05 10:00 |  | 197.85d |  |  | 13h | 228 |
| 16 | 1.4.1 | Draw up a contract for deal with Sight Machine | 1d | 2018-02-02 13:00 | 2018-02-05 09:00 | 14 | 200.27d | 0d | Rahul Jairaj; Greg Harrison | 10h | 190 |
| 17 | 1.4.2 | Receive approval for contract | 0.2d | 2018-02-05 09:00 | 2018-02-05 10:00 | 16 | 200.27d | 0d | Rahul Jairaj; Greg Harrison; Doug Coster | 3h | 38 |
| 18 | 2 | **Planning** | 3.4d | 2018-02-05 10:00 | 2018-02-07 11:00 |  | 197.85d |  |  | 153h | 4,468 |
| 19 | 2.1 | **Pre-planning tasks** | 0.2d | 2018-02-05 10:00 | 2018-02-05 11:00 |  | 197.85d |  |  | 3h | 38 |
| 20 | 2.1.1 | Sign contract with Sight Machine | 0.2d | 2018-02-05 10:00 | 2018-02-05 11:00 | 17 | 200.27d | 0d | Rahul Jairaj; Greg Harrison; Doug Coster | 3h | 38 |
| 21 | 2.2 | **Feasibility planning** | 2.4d | 2018-02-05 10:00 | 2018-02-06 15:00 |  | 401.28d |  |  | 109h | 2,964 |
| 22 | 2.2.1 | **Estimate budget and time** | 1.8d | 2018-02-05 11:00 | 2018-02-06 12:00 |  | 401.08d |  |  | 27h | 707.5 |
| 23 | 2.2.1.1 | Get detailed cost breakdowns for machines | 1d | 2018-02-05 11:00 | 2018-02-05 17:00 | 20 | 405.4d |  | Ray Bellman | 5h | 137.5 |
| 24 | 2.2.1.2 | Get detailed breakdown for employees | 1d | 2018-02-05 11:00 | 2018-02-05 17:00 | 20 | 403.2d | 0d | Rahul Jairaj; Greg Harrison | 10h | 190 |
| 25 | 2.2.1.3 | Get approval for cost | 0.2d | 2018-02-06 08:00 | 2018-02-06 09:00 | 24 | 403.2d | 0d | Rahul Jairaj; Greg Harrison | 2h | 38 |

| ID | WBS | Task | Duration | Start | Finish | Predecessors | Total slack | Free slack | Resources | Work | Cost |
| --- | --- | --- | --- | --- | --- | --- | --- | --- | --- | --- | --- |
| 26 | 2.2.1.4 | **Get detailed schedules** | 1.8d | 2018-02-05 11:00 | 2018-02-06 12:00 |  | 401.08d |  |  | 10h | 342 |
| 27 | 2.2.1.4.1 | Get work estimate for systems analysis, development and testing | 1.6d | 2018-02-05 11:00 | 2018-02-06 11:00 | 20 | 402.5d | 0d | Rahul Jairaj | 8h | 304 |
| 28 | 2.2.1.4.2 | Get approval for schedule | 0.2d | 2018-02-06 11:00 | 2018-02-06 12:00 | 27 | 402.5d | 0d | Rahul Jairaj; Greg Harrison | 2h | 38 |
| 29 | 2.2.2 | **Develop staffing plan** | 1.2d | 2018-02-06 08:00 | 2018-02-06 15:00 |  | 401.98d |  |  | 9h | 228 |
| 30 | 2.2.2.1 | Obtain necessary resources from other departments | 0.8d | 2018-02-06 09:00 | 2018-02-06 14:00 | 25 | 403.2d | 0d | Rahul Jairaj | 4h | 152 |
| 31 | 2.2.2.2 | Identify critical resources and document them for risk purposes. | 0.2d | 2018-02-06 08:00 | 2018-02-06 09:00 | 24 | 405d | 0d | Rahul Jairaj | 1h | 38 |
| 32 | 2.2.2.3 | Get approval for resources from all departments | 0.2d | 2018-02-06 14:00 | 2018-02-06 15:00 | 30 | 403.2d | 0d | Rahul Jairaj; Greg Harrison; Doug Coster; Norma Wilson | 4h | 38 |
| 33 | 2.2.3 | Organize first joint team meeting | 1d | 2018-02-05 10:00 | 2018-02-05 16:00 | 17 | 405.6d |  | Rahul Jairaj; Lamont Wilson; June Presten; Krishnanand Naik; Yi Wang; Mary Gibson; Christina Kutty; Paul Johnson; Ray Bellman; Chris Dobbrow; Kurt DeMaagd; Ryan Smith; Curtis Kellman | 62h | 1,663.5 |
| 34 | 2.2.4 | **Assess technical feasibility** | 0.8d | 2018-02-06 09:00 | 2018-02-06 14:00 |  | 402.98d |  |  | 11h | 365 |
| 35 | 2.2.4.1 | Assess ability of machines to handle required tasks | 0.4d | 2018-02-06 09:00 | 2018-02-06 11:00 | 25 | 404.4d | 0d | Ray Bellman; Lamont Wilson | 4h | 135 |
| 36 | 2.2.4.2 | Assess the deliverable database integration with JobBoss feasibility | 0.8d | 2018-02-06 09:00 | 2018-02-06 14:00 | 35SS | 404.4d |  | June Presten | 4h | 192 |
| 37 | 2.2.4.3 | Get approval for technical feasibility | 0.2d | 2018-02-06 11:00 | 2018-02-06 12:00 | 35 | 404.6d |  | Rahul Jairaj; Greg Harrison; Doug Coster | 3h | 38 |
| 38 | 2.3 | **Plan tasks for the project** | 1.2d | 2018-02-06 13:00 | 2018-02-07 10:00 |  | 401.98d |  |  | 7h | 228 |
| 39 | 2.3.1 | Develop Work Breakdown Structure | 1d | 2018-02-06 13:00 | 2018-02-07 09:00 | 28 | 403.4d | 0d | Rahul Jairaj | 5h | 190 |
| 40 | 2.3.2 | Receive approval for Work Breakdown Structure | 0.2d | 2018-02-07 09:00 | 2018-02-07 10:00 | 39 | 403.4d |  | Rahul Jairaj; Greg Harrison | 2h | 38 |
| 41 | 2.4 | **Development and QA Plan** | 0.8d | 2018-02-06 13:00 | 2018-02-06 17:00 |  | 401.08d |  |  | 28h | 1,048 |
| 42 | 2.4.1 | **Development planning** | 0.8d | 2018-02-06 13:00 | 2018-02-06 17:00 |  | 402.38d |  |  | 14h | 512 |
| 43 | 2.4.1.1 | Identify and set standards for development | 0.4d | 2018-02-06 13:00 | 2018-02-06 15:00 | 28 | 404.2d |  | Lamont Wilson; June Presten; Yi Wang | 6h | 240 |
| 44 | 2.4.1.2 | Develop and document the development plan | 0.6d | 2018-02-06 13:00 | 2018-02-06 16:00 | 28 | 403.8d | 0d | Lamont Wilson; Rahul Jairaj | 6h | 234 |
| 45 | 2.4.1.3 | Receive approval for development plan | 0.2d | 2018-02-06 16:00 | 2018-02-06 17:00 | 44 | 403.8d |  | Rahul Jairaj; Greg Harrison | 2h | 38 |
| 46 | 2.4.2 | **Quality planning** | 0.8d | 2018-02-06 13:00 | 2018-02-06 17:00 |  | 401.08d |  |  | 14h | 536 |
| 47 | 2.4.2.1 | Identify and set standards for quality assurance | 0.4d | 2018-02-06 13:00 | 2018-02-06 15:00 | 28 | 402.5d | 0d | Christina Kutty; Paul Johnson; Rahul Jairaj | 6h | 246 |
| 48 | 2.4.2.2 | Develop and document the QA plan | 0.6d | 2018-02-06 13:00 | 2018-02-06 16:00 | 28 | 403.8d | 0d | Rahul Jairaj; Christina Kutty | 6h | 252 |
| 49 | 2.4.2.3 | Receive approval for QA plan | 0.2d | 2018-02-06 16:00 | 2018-02-06 17:00 | 48 | 403.8d |  | Rahul Jairaj; Greg Harrison | 2h | 38 |

| ID | WBS | Task | Duration | Start | Finish | Predecessors | Total slack | Free slack | Resources | Work | Cost |
| --- | --- | --- | --- | --- | --- | --- | --- | --- | --- | --- | --- |
| 50 | 2.5 | **Reporting** | 1d | 2018-02-06 15:00 | 2018-02-07 11:00 |  | 401.78d |  |  | 6h | 190 |
| 51 | 2.5.1 | Establish reporting structure | 0.4d | 2018-02-06 15:00 | 2018-02-06 17:00 | 32 | 403.2d | 0d | Rahul Jairaj | 2h | 76 |
| 52 | 2.5.2 | Establish a timeline for reporting to stakeholders - weekly/daily and to what extent for each team | 0.4d | 2018-02-07 08:00 | 2018-02-07 10:00 | 51 | 403.2d | 0d | Rahul Jairaj | 2h | 76 |
| 53 | 2.5.3 | Receive approval for structure and timeline | 0.2d | 2018-02-07 10:00 | 2018-02-07 11:00 | 52 | 403.2d |  | Rahul Jairaj; Greg Harrison | 2h | 38 |
| 54 | 3 | **Execution** | 404.38d | 2018-02-05 11:00 | 2019-01-31 08:55 |  | 0.6d |  |  | 4489.5h | 164,638 |
| 55 | 3.1 | **Elicit requirements** | 183.4d | 2018-05-11 11:45 | 2018-10-23 08:45 |  | 0d |  |  | 1154h | 41,567 |
| 56 | 3.1.1 | **Elaborate requirements for sensor installation of CNC machinery** | 10.4d | 2018-05-11 11:45 | 2018-05-21 16:45 |  | 0d |  |  | 104h | 1,962 |
| 57 | 3.1.1.1 | Establish where sensors are placed for each machine | 3.4d | 2018-05-11 11:45 | 2018-05-15 13:45 | 275 | 0d |  | Krishnanand Naik; Curtis Kellman | 34h | 629 |
| 58 | 3.1.1.2 | Identify downstream dependencies in databases for each machine | 6.8d | 2018-05-15 13:45 | 2018-05-21 15:45 | 57 | 0d |  | Krishnanand Naik; Curtis Kellman | 68h | 1,258 |
| 59 | 3.1.1.3 | Receive approval for sensor requirements | 0.2d | 2018-05-21 15:45 | 2018-05-21 16:45 | 58 | 0d |  | Krishnanand Naik; Rahul Jairaj | 2h | 75 |
| 60 | 3.1.2 | **Elicit requirements for data extraction from the 34 Sight Machine modified CNC machines to cloud database for JobBoss integration** | 22.2d | 2018-05-21 16:45 | 2018-06-11 15:45 |  | 0d |  |  | 232h | 8,675 |
| 61 | 3.1.2.1 | Describe data obtained from each of the 34 machines | 6d | 2018-05-21 16:45 | 2018-05-25 14:45 | 59 | 0d |  | Krishnanand Naik; Ray Bellman; Mary Gibson | 90h | 3,375 |
| 62 | 3.1.2.2 | Establish organization of data in database tables, and note dependencies among machines | 6d | 2018-05-25 14:45 | 2018-06-01 11:45 | 61 | 0d |  | Krishnanand Naik; Ray Bellman; Mary Gibson | 90h | 3,375 |
| 63 | 3.1.2.3 | Document the criteria for success of data transferrence into cloud | 10d | 2018-06-01 11:45 | 2018-06-11 14:45 | 62 | 0d |  | Krishnanand Naik | 50h | 1,850 |
| 64 | 3.1.2.4 | Receive approval for data extraction from machinery to cloud requirements | 0.2d | 2018-06-11 14:45 | 2018-06-11 15:45 | 63 | 0d |  | Rahul Jairaj; Krishnanand Naik | 2h | 75 |
| 65 | 3.1.3 | **Describe requirements for extracting JobBoss ERP related information into the cloud, for integration with Sight Machine technology** | 20.2d | 2018-06-11 15:45 | 2018-06-28 11:45 |  | 0d |  |  | 162h | 6,655 |
| 66 | 3.1.3.1 | Document product data needed from JobBoss | 6d | 2018-06-11 15:45 | 2018-06-15 13:45 | 64 | 0d |  | Krishnanand Naik; June Presten | 60h | 2,550 |
| 67 | 3.1.3.2 | Document Employee data needed from JobBoss | 6d | 2018-06-15 13:45 | 2018-06-21 10:45 | 66 | 0d |  | Krishnanand Naik; June Presten | 60h | 2,550 |
| 68 | 3.1.3.3 | Document the criteria for success of data extracted from JobBoss | 8d | 2018-06-21 10:45 | 2018-06-28 10:45 | 67 | 0d |  | Krishnanand Naik | 40h | 1,480 |
| 69 | 3.1.3.4 | Receive approval for data extraction from JobBoss requirement | 0.2d | 2018-06-28 10:45 | 2018-06-28 11:45 | 68 | 0d |  | Krishnanand Naik; Rahul Jairaj | 2h | 75 |
| 70 | 3.1.4 | **Characterize requirements for Product Cost Analysis Integrated Reporting** | 22.2d | 2018-06-28 11:45 | 2018-07-18 10:45 |  | 0d |  |  | 112h | 4,145 |
| 71 | 3.1.4.1 | Create UI for Product Cost Analysis Integrated Reporting | 8d | 2018-06-28 11:45 | 2018-07-05 11:45 | 69 | 0d |  | Krishnanand Naik | 40h | 1,480 |
| 72 | 3.1.4.2 | Document where data in each field of the Product Cost Analysis report comes from | 8d | 2018-07-05 11:45 | 2018-07-12 11:45 | 71 | 0d |  | Krishnanand Naik | 40h | 1,480 |
| 73 | 3.1.4.3 | Document the validations needed for Product Cost Analysis data between JobBoss extract and Sight Machine implemetation extract | 4d | 2018-07-12 11:45 | 2018-07-16 16:45 | 72 | 0d |  | Krishnanand Naik | 20h | 740 |
| 74 | 3.1.4.4 | Document the criteria for success of the Product Cost Analysis Integrated Reporting | 2d | 2018-07-16 16:45 | 2018-07-18 09:45 | 73 | 0d |  | Krishnanand Naik | 10h | 370 |
| 75 | 3.1.4.5 | Receive approval for Product Cost Analysis Integrated Reporting requirement | 0.2d | 2018-07-18 09:45 | 2018-07-18 10:45 | 74 | 0d |  | Krishnanand Naik; Rahul Jairaj | 2h | 75 |

| ID | WBS | Task | Duration | Start | Finish | Predecessors | Total slack | Free slack | Resources | Work | Cost |
| --- | --- | --- | --- | --- | --- | --- | --- | --- | --- | --- | --- |
| 76 | 3.1.5 | **Elaborate requirements for Employee Efficiency Analysis Inregrated Reporting** | 64.2d | 2018-07-18 10:45 | 2018-09-13 11:45 |  | 0d |  |  | 322h | 11,915 |
| 77 | 3.1.5.1 | Create UI for Employee Efficiency Analysis Integrated Reporting | 18d | 2018-07-18 10:45 | 2018-08-02 13:45 | 75 | 0d |  | Krishnanand Naik | 90h | 3,330 |
| 78 | 3.1.5.2 | Document where data in each field of the Employee Efficiency Analysis reprot comes from | 18d | 2018-08-02 13:45 | 2018-08-17 15:45 | 77 | 0d |  | Krishnanand Naik | 90h | 3,330 |
| 79 | 3.1.5.3 | Document the validations needed for Employee Efficiency Analysis data between JobBoss extract and Sight Machine implemetation extract | 18d | 2018-08-17 15:45 | 2018-09-05 08:45 | 78 | 0d |  | Krishnanand Naik | 90h | 3,330 |
| 80 | 3.1.5.4 | Document the criteria for success of the Employee Efficiency Analysis Integrated Reporting | 10d | 2018-09-05 08:45 | 2018-09-13 10:45 | 79 | 0d |  | Krishnanand Naik | 50h | 1,850 |
| 81 | 3.1.5.5 | Receive approval for Employee Efficiency Analysis Integrated Reporting requirement | 0.2d | 2018-09-13 10:45 | 2018-09-13 11:45 | 80 | 0d |  | Rahul Jairaj; Krishnanand Naik | 2h | 75 |
| 82 | 3.1.6 | **Describe the requirements for Profit Analysis by Product Integrated Reporting** | 44.2d | 2018-09-13 11:45 | 2018-10-23 08:45 |  | 19d |  |  | 222h | 8,215 |
| 83 | 3.1.6.1 | Create UI for Profit Analysis by Product Analysis Integrated Reporting | 14d | 2018-09-13 11:45 | 2018-09-26 09:45 | 81 | 21.42d | 0d | Krishnanand Naik | 70h | 2,590 |
| 84 | 3.1.6.2 | Document where data in each field of the Profit Analysis by Product Analysis reprot comes from | 14d | 2018-09-26 09:45 | 2018-10-08 16:45 | 83 | 21.42d | 0d | Krishnanand Naik | 70h | 2,590 |
| 85 | 3.1.6.3 | Document the validations needed for Profit Analysis by Product Analysis data between JobBoss extract and Sight Machine implemetation extract | 8d | 2018-10-08 16:45 | 2018-10-15 16:45 | 84 | 21.42d | 0d | Krishnanand Naik | 40h | 1,480 |
| 86 | 3.1.6.4 | Document the criteria for success of the Profit Analysis by Product Analysis Integrated Reporting | 8d | 2018-10-15 16:45 | 2018-10-22 16:45 | 85 | 21.42d | 0d | Krishnanand Naik | 40h | 1,480 |
| 87 | 3.1.6.5 | Receive approval for Profit Analysis by Product Integrated Reporting requirement | 0.2d | 2018-10-22 16:45 | 2018-10-23 08:45 | 86 | 21.42d | 19d | Krishnanand Naik; Rahul Jairaj | 2h | 75 |
| 88 | 3.2 | **Training** | 363.65d | 2018-02-05 11:00 | 2018-12-25 14:15 |  | 10d |  |  | 525h | 13,800 |
| 89 | 3.2.1 | Manufacturing System Training Materials Development | 27.5d | 2018-02-05 11:00 | 2018-02-28 13:30 | 20 | 337.57d | 333.55d | Mary Gibson; Curtis Kellman | 275h | 6,600 |
| 90 | 3.2.2 | Manufacturing System Training classes | 1d | 2018-12-25 08:15 | 2018-12-25 14:15 | 89, 214 | 0d |  |  | 75h |  |
| 91 | 3.2.3 | JobBoss Integration Training Materials Development | 30d | 2018-02-05 11:00 | 2018-03-02 09:00 | 20 | 345.07d | 331.05d | Mary Gibson | 150h | 7,200 |
| 92 | 3.2.4 | JobBoss System Integration Training classes | 1d | 2018-12-25 08:15 | 2018-12-25 14:15 | 91, 214 | 11.42d | 10d |  | 25h |  |
| 93 | 3.3 | **Development** | 271.68d | 2018-06-01 10:30 | 2019-01-31 08:55 |  | 0.6d |  |  | 1587.5h | 57,329.5 |
| 94 | 3.3.1 | **CNC Sensor work** | 17.8d | 2018-06-01 10:30 | 2018-06-18 11:30 |  | 65.35d |  |  | 234h | 5,713.5 |
| 95 | 3.3.1.1 | **Sight Machine sensor integration** | 3.6d | 2018-06-01 10:30 | 2018-06-05 13:30 |  | 65.35d |  |  | 28h | 38 |
| 96 | 3.3.1.1.1 | **Sight Machine Sensor Phase 1 sensor integration** | 1.2d | 2018-06-01 10:30 | 2018-06-04 08:30 |  | 65.35d |  |  | 8h |  |
| 97 | 3.3.1.1.1.1 | Install sensors in first 11 CNC Machines | 1.2d | 2018-06-01 10:30 | 2018-06-04 08:30 | 227, 59 | 67.77d | 0d | Curtis Kellman | 6h |  |
| 98 | 3.3.1.1.1.2 | Fix defects in sensors for the first 11 CNC Machines | 0.4d | 2018-06-01 10:30 | 2018-06-01 13:30 | 160SS | 273.3d | 0d | Curtis Kellman | 2h |  |
| 99 | 3.3.1.1.2 | **Sight Machine Sensor Phase 2 sensor integration** | 1.2d | 2018-06-04 08:30 | 2018-06-04 15:30 |  | 65.35d |  |  | 8h |  |
| 100 | 3.3.1.1.2.1 | Install sensors in second batch of 11 CNC Machines | 1.2d | 2018-06-04 08:30 | 2018-06-04 15:30 | 97 | 67.77d | 0d | Curtis Kellman | 6h |  |
| 101 | 3.3.1.1.2.2 | Fix defects in sensors for the second batch of 11 CNC Machines | 0.4d | 2018-06-04 08:30 | 2018-06-04 10:30 | 163SS | 272.1d | 0d | Curtis Kellman | 2h |  |

| ID | WBS | Task | Duration | Start | Finish | Predecessors | Total slack | Free slack | Resources | Work | Cost |
| --- | --- | --- | --- | --- | --- | --- | --- | --- | --- | --- | --- |
| 102 | 3.3.1.1.3 | **Sight Machine Sensor Phase 3 sensor integration** | 1.2d | 2018-06-04 15:30 | 2018-06-05 13:30 |  | 65.35d |  |  | 8h |  |
| 103 | 3.3.1.1.3.1 | Install sensors in final batch of 12 CNC Machines | 1.2d | 2018-06-04 15:30 | 2018-06-05 13:30 | 100 | 67.77d | 0d | Curtis Kellman | 6h |  |
| 104 | 3.3.1.1.3.2 | Fix defects in sensors for the final batch of 12 CNC Machines | 0.4d | 2018-06-04 15:30 | 2018-06-05 08:30 | 166SS | 67.77d | 0d | Curtis Kellman | 2h |  |
| 105 | 3.3.1.1.4 | Development sign off for sensors | 0.2d | 2018-06-05 08:30 | 2018-06-05 09:30 | 104 | 67.77d | 0d | Curtis Kellman; Rahul Jairaj; Kurt DeMaagd; Ryan Smith | 4h | 38 |
| 106 | 3.3.1.2 | **Integrate machines to network and fix defects** | 14.8d | 2018-06-05 09:30 | 2018-06-18 11:30 |  | 65.35d |  |  | 206h | 5,675.5 |
| 107 | 3.3.1.2.1 | **Integrate CNC Machines to Nolte for Phase 1** | 12d | 2018-06-05 09:30 | 2018-06-14 14:30 |  | 65.35d |  |  | 68h | 1,870 |
| 108 | 3.3.1.2.1.1 | Configure machines to work with Nolte after Sight Machine sensor installation for Phase 1 | 12d | 2018-06-05 09:30 | 2018-06-14 14:30 | 105 | 67.77d | 0d | Ray Bellman | 60h | 1,650 |
| 109 | 3.3.1.2.1.2 | Fix physical defects related to sensor addition and integration to Nolte for Phase 1 | 1.6d | 2018-06-05 09:30 | 2018-06-06 09:30 | 171SS | 67.77d | 0d | Ray Bellman | 8h | 220 |
| 110 | 3.3.1.2.2 | **Integrate CNC Machines to Nolte for Phase 2** | 12d | 2018-06-06 08:30 | 2018-06-15 13:30 |  | 65.35d |  |  | 68h | 1,870 |
| 111 | 3.3.1.2.2.1 | Configure machines to work with Nolte after Sight Machine sensor installation for Phase 2 | 12d | 2018-06-06 08:30 | 2018-06-15 13:30 | 231 | 67.77d | 0d | Ray Bellman | 60h | 1,650 |
| 112 | 3.3.1.2.2.2 | Fix physical defects related to sensor addition and integration to Nolte for Phase 2 | 1.6d | 2018-06-06 08:30 | 2018-06-07 08:30 | 174SS | 67.77d | 0d | Ray Bellman | 8h | 220 |
| 113 | 3.3.1.2.3 | **Integrate CNC Machines to Nolte for Phase 3** | 12d | 2018-06-06 16:30 | 2018-06-18 11:30 |  | 65.35d |  |  | 68h | 1,870 |
| 114 | 3.3.1.2.3.1 | Configure machines to work with Nolte after Sight Machine sensor installation for Phase 3 | 12d | 2018-06-06 16:30 | 2018-06-18 11:30 | 234 | 67.77d | 0d | Ray Bellman | 60h | 1,650 |
| 115 | 3.3.1.2.3.2 | Fix physical defects related to sensor addition and integration to Nolte for Phase 3 | 1.6d | 2018-06-06 16:30 | 2018-06-07 16:30 | 177SS | 67.77d | 0d | Ray Bellman | 8h | 220 |
| 116 | 3.3.1.2.4 | Development sign off for sensor machine integration | 0.2d | 2018-06-07 16:30 | 2018-06-08 08:30 | 115 | 67.77d | 1.25d | Ray Bellman; Rahul Jairaj | 2h | 65.5 |
| 117 | 3.3.2 | **Extract data from Sight Machine to Cloud-based Database for JobBoss Integration** | 30d | 2018-06-11 15:45 | 2018-07-06 13:45 |  | 62.5d |  |  | 303h | 11,886 |
| 118 | 3.3.2.1 | Detail AI pipelines for each unique machine | 6d | 2018-06-11 15:45 | 2018-06-15 13:45 | 116, 64 | 64.92d | 0d | Lamont Wilson; Yi Wang | 60h | 2,160 |
| 119 | 3.3.2.2 | Refine and clean data | 6d | 2018-06-15 13:45 | 2018-06-21 10:45 | 118 | 233.25d | 0d | Lamont Wilson; Yi Wang | 60h | 2,160 |
| 120 | 3.3.2.3 | Join, cluster and contextualize relevant data from different machines | 6d | 2018-06-21 10:45 | 2018-06-27 08:45 | 119 | 233.25d | 0d | Lamont Wilson; Yi Wang | 60h | 2,160 |
| 121 | 3.3.2.4 | Structure Cloud Database for each unique machine | 12d | 2018-06-27 08:45 | 2018-07-06 13:45 | 120 | 233.25d | 0d | June Presten | 60h | 2,880 |
| 122 | 3.3.2.5 | Fix machine-side data related defects | 4d | 2018-06-11 15:45 | 2018-06-14 10:45 | 181SS | 64.92d | 0d | Lamont Wilson; Yi Wang; June Presten | 60h | 2,400 |
| 123 | 3.3.2.6 | Develeopment sign off on machine to cloud | 0.2d | 2018-06-14 10:45 | 2018-06-14 11:45 | 122 | 64.92d | 16d | Lamont Wilson; June Presten; Rahul Jairaj | 3h | 126 |
| 124 | 3.3.3 | **Extract data from JobBoss to Cloud-based Database for Sight Machine Integration** | 21.2d | 2018-06-28 11:45 | 2018-07-17 14:45 |  | 46.5d |  |  | 178h | 8,246 |
| 125 | 3.3.3.1 | Extract Product information from JobBoss | 7d | 2018-06-28 11:45 | 2018-07-04 15:45 | 123, 69 | 48.92d | 0d | June Presten | 35h | 1,680 |
| 126 | 3.3.3.2 | Extract Employee information from JobBoss | 7d | 2018-06-28 11:45 | 2018-07-04 15:45 | 125SS | 48.92d | 0d | June Presten | 35h | 1,680 |
| 127 | 3.3.3.3 | Transform data into discrenable format for manipulation in cloud | 7d | 2018-07-04 15:45 | 2018-07-11 09:45 | 126 | 48.92d | 0d | June Presten | 35h | 1,680 |
| 128 | 3.3.3.4 | Integrate product and employee data to Sight Machine data | 2.33d | 2018-07-11 09:45 | 2018-07-12 14:25 | 127 | 48.92d | 0d | June Presten; Lamont Wilson; Yi Wang | 35h | 1,400 |
| 129 | 3.3.3.5 | Fix JobBoss data related defects | 7d | 2018-07-11 09:45 | 2018-07-17 13:45 | 191SS | 48.92d | 0d | June Presten | 35h | 1,680 |
| 130 | 3.3.3.6 | Development sign off on JobBoss integration | 0.2d | 2018-07-17 13:45 | 2018-07-17 14:45 | 129 | 48.92d | 1d | June Presten; Lamont Wilson; Rahul Jairaj | 3h | 126 |

| ID | WBS | Task | Duration | Start | Finish | Predecessors | Total slack | Free slack | Resources | Work | Cost |
| --- | --- | --- | --- | --- | --- | --- | --- | --- | --- | --- | --- |
| 131 | 3.3.4 | **Develop the Product Cost Analysis Integrated Reporting** | 18.7d | 2018-07-18 10:45 | 2018-08-03 08:15 |  | 45.5d |  |  | 99.5h | 3,607.5 |
| 132 | 3.3.4.1 | Create UI for Product Cost Analysis Integrated Reporting | 2.5d | 2018-07-18 10:45 | 2018-07-19 16:15 | 130, 75 | 47.92d | 0d | Krishnanand Naik | 12.5h | 462.5 |
| 133 | 3.3.4.2 | Design repurpose of data from the Sight Machine - JobBoss integrated system into Product Cost Analysis Integrated Reporting | 3d | 2018-07-19 16:15 | 2018-07-23 15:15 | 132 | 47.92d | 0d | Krishnanand Naik; Yi Wang | 30h | 1,035 |
| 134 | 3.3.4.3 | Design vizualizations for data arriving into the Product Cost Analysis Integrated Reporting | 5d | 2018-07-23 15:15 | 2018-07-26 16:15 | 133 | 47.92d | 0d | Krishnanand Naik | 25h | 925 |
| 135 | 3.3.4.4 | Fix defects for Product Cost Analysis Integrated Reporting | 6d | 2018-07-30 09:15 | 2018-08-02 16:15 | 197 | 47.92d | 0d | Krishnanand Naik | 30h | 1,110 |
| 136 | 3.3.4.5 | Development sign off for Product Cost Analysis Integrated Reporting | 0.2d | 2018-08-02 16:15 | 2018-08-03 08:15 | 135 | 47.92d | 45.5d | Krishnanand Naik; Rahul Jairaj | 2h | 75 |
| 137 | 3.3.5 | **Develop the Employee Efficiency Analysis Integrated Reporting** | 63.2d | 2018-09-13 11:45 | 2018-11-07 16:45 |  | 0d |  |  | 327h | 11,875 |
| 138 | 3.3.5.1 | Create UI for Employee Efficiency Analysis Integrated Reporting | 18d | 2018-09-13 11:45 | 2018-09-28 14:45 | 136, 81 | 0d |  | Krishnanand Naik | 90h | 3,330 |
| 139 | 3.3.5.2 | Design repurpose of data from the Sight Machine - JobBoss integrated system into Employee Efficiency Analysis Integrated Reporting | 9d | 2018-09-28 14:45 | 2018-10-08 10:45 | 138 | 0d |  | Krishnanand Naik; Yi Wang | 90h | 3,105 |
| 140 | 3.3.5.3 | Design vizualizations for data arriving into the Employee Efficiency Analysis Integrated Reporting | 18d | 2018-10-08 10:45 | 2018-10-23 13:45 | 139 | 0d |  | Krishnanand Naik | 90h | 3,330 |
| 141 | 3.3.5.4 | Fix defects for Employee Efficiency Analysis Integrated Reporting | 11d | 2018-10-29 16:45 | 2018-11-07 15:45 | 204 | 0d |  | Krishnanand Naik | 55h | 2,035 |
| 142 | 3.3.5.5 | Development sign off for Employee Efficiency Analysis Integrated Reporting | 0.2d | 2018-11-07 15:45 | 2018-11-07 16:45 | 141 | 0d |  | Krishnanand Naik; Rahul Jairaj | 2h | 75 |
| 143 | 3.3.6 | **Develop the Profit Analysis by Product Integrated Reporting** | 43.2d | 2018-11-07 16:45 | 2018-12-17 16:45 |  | 0d |  |  | 222h | 8,077.5 |
| 144 | 3.3.6.1 | Create UI for Profit Analysis by Product Integrated Reporting | 11d | 2018-11-07 16:45 | 2018-11-16 15:45 | 142, 87 | 0d |  | Krishnanand Naik | 55h | 2,035 |
| 145 | 3.3.6.2 | Design repurpose of data from the Sight Machine - JobBoss integrated system into Profit Analysis by Product Integrated Reporting | 5.5d | 2018-11-16 15:45 | 2018-11-23 10:15 | 144 | 0d |  | Krishnanand Naik; Yi Wang | 55h | 1,897.5 |
| 146 | 3.3.6.3 | Design vizualizations for data arriving into the Profit Analysis by Product Integrated Reporting | 11d | 2018-11-23 10:15 | 2018-12-04 09:15 | 145 | 0d |  | Krishnanand Naik | 55h | 2,035 |
| 147 | 3.3.6.4 | Fix defects for Profit Analysis by Product Integrated Reporting | 11d | 2018-12-06 16:45 | 2018-12-17 15:45 | 211 | 0d |  | Krishnanand Naik | 55h | 2,035 |
| 148 | 3.3.6.5 | Development sign off for Profit Analysis by Product Integrated Reporting | 0.2d | 2018-12-17 15:45 | 2018-12-17 16:45 | 147 | 50.25d | 0d | Krishnanand Naik; Rahul Jairaj | 2h | 75 |
| 149 | 3.3.7 | **Deploy in production environment** | 18.53d | 2019-01-09 08:15 | 2019-01-24 13:55 |  | 0d |  |  | 214h | 7,848 |
| 150 | 3.3.7.1 | Deploy Sight Machine implementation on production environment | 2.67d | 2019-01-09 08:15 | 2019-01-10 14:35 | 92FS+1w, 90FS+3w | 0d |  | Lamont Wilson; Yi Wang; June Presten | 40h | 1,600 |
| 151 | 3.3.7.2 | Deploy JobBoss integration on production environment | 2.67d | 2019-01-10 14:35 | 2019-01-14 10:55 | 150 | 0d |  | Lamont Wilson; Yi Wang; June Presten | 40h | 1,600 |
| 152 | 3.3.7.3 | Deploy Product Cost Analysis on production environment | 3d | 2019-01-14 10:55 | 2019-01-16 09:55 | 151 | 0d |  | Krishnanand Naik; Yi Wang | 30h | 1,035 |
| 153 | 3.3.7.4 | Deploy Employee Efficiency Analysis on production environment | 6d | 2019-01-16 09:55 | 2019-01-21 16:55 | 152 | 0d |  | Krishnanand Naik; Yi Wang | 60h | 2,070 |
| 154 | 3.3.7.5 | Deploy Profit by Product Analysis on production environment | 4d | 2019-01-21 16:55 | 2019-01-24 11:55 | 153 | 0d |  | Krishnanand Naik; Yi Wang | 40h | 1,380 |
| 155 | 3.3.7.6 | Get final Development sign off | 0.2d | 2019-01-24 11:55 | 2019-01-24 13:55 | 154 | 9.22d |  | Lamont Wilson; June Presten; Krishnanand Naik; Rahul Jairaj | 4h | 163 |
| 156 | 3.3.8 | Conduct a walkthrough of the project to upper management | 0.4d | 2019-01-30 15:55 | 2019-01-31 08:55 | 358 | 0d |  | Rahul Jairaj; Norma Wilson; Mat Jackson; Greg Harrison; Doug Coster | 10h | 76 |

| ID | WBS | Task | Duration | Start | Finish | Predecessors | Total slack | Free slack | Resources | Work | Cost |
| --- | --- | --- | --- | --- | --- | --- | --- | --- | --- | --- | --- |
| 157 | 3.4 | **Quality Assurance** | 270.48d | 2018-06-01 10:30 | 2019-01-30 10:55 |  | 1.8d |  |  | 1223h | 51,941.5 |
| 158 | 3.4.1 | **CNC Sight Machine Sensor Implementation Testing** | 2.7d | 2018-06-01 10:30 | 2018-06-04 17:00 |  | 67.75d |  |  | 15h | 633 |
| 159 | 3.4.1.1 | **First batch testing** | 0.3d | 2018-06-01 10:30 | 2018-06-01 12:00 |  | 271.88d |  |  | 4h | 170 |
| 160 | 3.4.1.1.1 | Perform testing on first batch of 11 CNC Machines with sensors installed | 0.3d | 2018-06-01 10:30 | 2018-06-01 12:00 | 97SS | 273.3d | 0d | Christina Kutty; Paul Johnson | 3h | 127.5 |
| 161 | 3.4.1.1.2 | Perform retesting on first batch of 11 CNC Machines with sensors installed | 0.1d | 2018-06-01 10:30 | 2018-06-01 11:00 | 98SS | 273.6d |  | Paul Johnson; Christina Kutty | 1h | 42.5 |
| 162 | 3.4.1.2 | **Second batch testing** | 0.3d | 2018-06-04 08:30 | 2018-06-04 10:00 |  | 270.68d |  |  | 4h | 170 |
| 163 | 3.4.1.2.1 | Perform testing for the second batch of 11 CNC Machines with sensors installed | 0.3d | 2018-06-04 08:30 | 2018-06-04 10:00 | 100SS | 272.1d | 0d | Christina Kutty; Paul Johnson | 3h | 127.5 |
| 164 | 3.4.1.2.2 | Perform retesting for the second batch of 11 CNC Machines with sensors installed | 0.1d | 2018-06-04 08:30 | 2018-06-04 09:00 | 101SS | 272.4d |  | Paul Johnson; Christina Kutty | 1h | 42.5 |
| 165 | 3.4.1.3 | **Third batch testing** | 0.3d | 2018-06-04 15:30 | 2018-06-04 17:00 |  | 65.35d |  |  | 4h | 170 |
| 166 | 3.4.1.3.1 | Perform testing for the final batch of 12 CNC Machines with sensors installed | 0.3d | 2018-06-04 15:30 | 2018-06-04 17:00 | 103SS | 67.77d | 0d | Christina Kutty; Paul Johnson | 3h | 127.5 |
| 167 | 3.4.1.3.2 | Perform retesting for the final batch of 12 CNC Machines with sensors installed | 0.1d | 2018-06-04 15:30 | 2018-06-04 16:00 | 104SS | 271d | 0d | Paul Johnson; Christina Kutty | 1h | 42.5 |
| 168 | 3.4.1.4 | Receive QA sign off for Sensor | 0.2d | 2018-06-04 16:00 | 2018-06-04 17:00 | 167 | 271d |  | Christina Kutty; Paul Johnson; Rahul Jairaj | 3h | 123 |
| 169 | 3.4.2 | **CNC Nolte Sensor Integration Testing** | 5d | 2018-06-05 09:30 | 2018-06-08 10:30 |  | 65.35d |  |  | 105h | 4,458 |
| 170 | 3.4.2.1 | **First batch integration testing** | 2.2d | 2018-06-05 09:30 | 2018-06-06 13:30 |  | 65.35d |  |  | 34h | 1,445 |
| 171 | 3.4.2.1.1 | Perform testing on first batch of 11 CNC Machines which has been set to work with Nolte's network | 2.2d | 2018-06-05 09:30 | 2018-06-06 13:30 | 108SS | 67.77d | 0d | Christina Kutty; Paul Johnson | 22h | 935 |
| 172 | 3.4.2.1.2 | Perform retesting on first batch of 11 CNC Machines which has been set to work with Nolte's network | 1.2d | 2018-06-05 09:30 | 2018-06-05 16:30 | 109SS | 67.77d | 0d | Paul Johnson; Christina Kutty | 12h | 510 |
| 173 | 3.4.2.2 | **Second batch integration testing** | 2.2d | 2018-06-06 08:30 | 2018-06-07 11:30 |  | 65.35d |  |  | 34h | 1,445 |
| 174 | 3.4.2.2.1 | Perform testing for the second batch of 11 CNC Machines which has been set to work with Nolte's network | 2.2d | 2018-06-06 08:30 | 2018-06-07 11:30 | 111SS | 67.77d | 0d | Christina Kutty; Paul Johnson | 22h | 935 |
| 175 | 3.4.2.2.2 | Perform retesting for the second batch of 11 CNC Machines which has been set to work with Nolte's network | 1.2d | 2018-06-06 08:30 | 2018-06-06 15:30 | 112SS | 67.77d | 0d | Paul Johnson; Christina Kutty | 12h | 510 |
| 176 | 3.4.2.3 | **Third batch integration testing** | 2.2d | 2018-06-06 16:30 | 2018-06-08 10:30 |  | 65.35d |  |  | 34h | 1,445 |
| 177 | 3.4.2.3.1 | Perform testing for the final batch of 12 CNC Machines which has been set to work with Nolte's network | 2.2d | 2018-06-06 16:30 | 2018-06-08 10:30 | 114SS | 67.77d | 0d | Christina Kutty; Paul Johnson | 22h | 935 |
| 178 | 3.4.2.3.2 | Perform retesting for the final batch of 12 CNC Machines which has been set to work with Nolte's network | 1.2d | 2018-06-06 16:30 | 2018-06-07 14:30 | 115SS | 266.5d | 0d | Paul Johnson; Christina Kutty | 12h | 510 |
| 179 | 3.4.2.4 | Receive sensor integration testing QA sign off | 0.2d | 2018-06-06 16:30 | 2018-06-07 08:30 | 178SS | 267.7d |  | Christina Kutty; Paul Johnson; Rahul Jairaj | 3h | 123 |
| 180 | 3.4.3 | **Test data extract from Sight Machine to Cloud-based Database for JobBoss Integration** | 23d | 2018-06-11 15:45 | 2018-07-02 09:45 |  | 62.5d |  |  | 223h | 9,473 |
| 181 | 3.4.3.1 | Test AI pipelines for each unique machine | 5d | 2018-06-11 15:45 | 2018-06-14 16:45 | 118SS | 64.92d | 0d | Christina Kutty; Paul Johnson | 50h | 2,125 |
| 182 | 3.4.3.2 | Test Refined and cleaned data | 5d | 2018-06-15 13:45 | 2018-06-20 14:45 | 119SS | 252.25d |  | Paul Johnson; Christina Kutty | 50h | 2,125 |
| 183 | 3.4.3.3 | Test Joined, clustered and contextualized data from different machines | 5d | 2018-06-21 10:45 | 2018-06-26 11:45 | 120SS | 246.25d |  | Christina Kutty; Paul Johnson | 50h | 2,125 |
| 184 | 3.4.3.4 | Test the Cloud Database Structure for each unique machine | 5d | 2018-06-27 08:45 | 2018-07-02 09:45 | 121SS | 240.25d |  | Paul Johnson; Christina Kutty | 50h | 2,125 |
| 185 | 3.4.3.5 | Retest machine-cloud defects | 2d | 2018-06-11 15:45 | 2018-06-13 08:45 | 122SS | 261.05d | 0d | Christina Kutty; Paul Johnson | 20h | 850 |
| 186 | 3.4.3.6 | Receive QA sign off for Sight Machine data extract | 0.2d | 2018-06-13 08:45 | 2018-06-13 09:45 | 185 | 261.05d |  | Paul Johnson; Christina Kutty; Rahul Jairaj | 3h | 123 |

| ID | WBS | Task | Duration | Start | Finish | Predecessors | Total slack | Free slack | Resources | Work | Cost |
| --- | --- | --- | --- | --- | --- | --- | --- | --- | --- | --- | --- |
| 187 | 3.4.4 | **Test data extract from JobBoss to Cloud-based Database for Sight Machine Integration** | 16.5d | 2018-06-28 11:45 | 2018-07-12 15:15 |  | 60.5d |  |  | 123h | 5,223 |
| 188 | 3.4.4.1 | Test Product information from JobBoss | 2.5d | 2018-06-28 11:45 | 2018-07-02 08:15 | 125SS | 240.55d |  | Christina Kutty; Paul Johnson | 25h | 1,062.5 |
| 189 | 3.4.4.2 | Test Employee information from JobBoss | 2.5d | 2018-06-28 11:45 | 2018-07-02 08:15 | 126SS | 240.55d |  | Paul Johnson; Christina Kutty | 25h | 1,062.5 |
| 190 | 3.4.4.3 | Test transformed data in the cloud | 2.5d | 2018-07-04 15:45 | 2018-07-06 11:15 | 127SS | 233.55d |  | Christina Kutty; Paul Johnson | 25h | 1,062.5 |
| 191 | 3.4.4.4 | Test integrated product and employee data | 2.5d | 2018-07-11 09:45 | 2018-07-12 15:15 | 128SS | 48.92d | 0d | Paul Johnson; Christina Kutty | 25h | 1,062.5 |
| 192 | 3.4.4.5 | Retest JobBoss integration | 2d | 2018-07-11 09:45 | 2018-07-12 11:45 | 129SS | 226.85d | 0d | Christina Kutty; Paul Johnson | 20h | 850 |
| 193 | 3.4.4.6 | Receive QA sign off for JobBoss data extract | 0.2d | 2018-07-12 11:45 | 2018-07-12 13:45 | 192 | 226.85d |  | Paul Johnson; Christina Kutty; Rahul Jairaj | 3h | 123 |
| 194 | 3.4.5 | **Test the Product Cost Analysis Integrated Reporting** | 19.2d | 2018-07-19 16:15 | 2018-08-06 16:15 |  | 53.5d |  |  | 98h | 4,160.5 |
| 195 | 3.4.5.1 | Test the UI for Product Cost Analysis Integrated Reporting | 2.5d | 2018-07-19 16:15 | 2018-07-23 11:45 | 132 | 215.85d |  | Christina Kutty; Paul Johnson | 25h | 1,062.5 |
| 196 | 3.4.5.2 | Test the data repurpose from the Sight Machine - JobBoss integrated system into Product Cost Analysis Integrated Reporting | 2d | 2018-07-23 15:15 | 2018-07-25 08:15 | 133 | 213.35d |  | Paul Johnson; Christina Kutty | 20h | 850 |
| 197 | 3.4.5.3 | Test the vizualizations for data arriving into the Product Cost Analysis Integrated Reporting | 2d | 2018-07-26 16:15 | 2018-07-30 09:15 | 134 | 47.92d | 0d | Christina Kutty; Paul Johnson | 20h | 850 |
| 198 | 3.4.5.4 | Perform retesting of Product Cost Analysis | 1.5d | 2018-08-02 16:15 | 2018-08-03 15:45 | 135 | 199.15d | 0d | Paul Johnson; Christina Kutty | 15h | 637.5 |
| 199 | 3.4.5.5 | Perform User Acceptance Testing of Product Cost Analysis Integrated Reporting | 1.5d | 2018-08-03 15:45 | 2018-08-06 15:15 | 198 | 199.15d | 0d | Paul Johnson; Christina Kutty | 15h | 637.5 |
| 200 | 3.4.5.6 | Receive QA sign off for Product Cost Analysis | 0.2d | 2018-08-06 15:15 | 2018-08-06 16:15 | 199 | 199.15d |  | Paul Johnson; Christina Kutty; Rahul Jairaj | 3h | 123 |
| 201 | 3.4.6 | **Test the Employee Efficiency Analysis Integrated Reporting** | 54.7d | 2018-09-28 14:45 | 2018-11-15 16:15 |  | 27d |  |  | 308h | 13,085.5 |
| 202 | 3.4.6.1 | Test the UI for Employee Efficiency Analysis Integrated Reporting | 7d | 2018-09-28 14:45 | 2018-10-05 08:45 | 138 | 131.65d |  | Christina Kutty; Paul Johnson | 70h | 2,975 |
| 203 | 3.4.6.2 | Test the data repurpose from the Sight Machine - JobBoss integrated system into Employee Efficiency Analysis Integrated Reporting | 7d | 2018-10-08 10:45 | 2018-10-12 14:45 | 139 | 122.65d |  | Paul Johnson; Christina Kutty | 70h | 2,975 |
| 204 | 3.4.6.3 | Test vizualizations for data arriving into the Employee Efficiency Analysis Integrated Reporting | 7d | 2018-10-23 13:45 | 2018-10-29 16:45 | 140 | 0d |  | Christina Kutty; Paul Johnson | 70h | 2,975 |
| 205 | 3.4.6.4 | Retest Employee Efficiency Analysis | 6d | 2018-11-07 15:45 | 2018-11-13 13:45 | 141 | 83.95d | 0d | Paul Johnson; Christina Kutty | 60h | 2,550 |
| 206 | 3.4.6.5 | Perform User Acceptance Testing of Employee Efficiency Analysis Integrated Reporting | 3.5d | 2018-11-13 13:45 | 2018-11-15 15:15 | 205 | 83.95d | 0d | Paul Johnson; Christina Kutty | 35h | 1,487.5 |
| 207 | 3.4.6.6 | Receive QA sign off for Employee Efficiency Analysis | 0.2d | 2018-11-15 15:15 | 2018-11-15 16:15 | 206 | 83.95d |  | Paul Johnson; Christina Kutty; Rahul Jairaj | 3h | 123 |
| 208 | 3.4.7 | **Test the Profit Analysis by Product Integrated Reporting** | 38.7d | 2018-11-16 15:45 | 2018-12-25 08:15 |  | 16.5d |  |  | 203h | 8,623 |
| 209 | 3.4.7.1 | Test UI for Profit Analysis by Product Integrated Reporting | 4.5d | 2018-11-16 15:45 | 2018-11-21 14:15 | 144 | 77.95d |  | Christina Kutty; Paul Johnson | 45h | 1,912.5 |
| 210 | 3.4.7.2 | Test data repurpose from the Sight Machine - JobBoss integrated system into Profit Analysis by Product Integrated Reporting | 4.5d | 2018-11-23 10:15 | 2018-11-28 08:45 | 145 | 72.45d |  | Paul Johnson; Christina Kutty | 45h | 1,912.5 |
| 211 | 3.4.7.3 | Test vizualizations for data arriving into the Profit Analysis by Product Integrated Reporting | 4.5d | 2018-12-04 09:15 | 2018-12-06 16:45 | 146 | 0d |  | Christina Kutty; Paul Johnson | 45h | 1,912.5 |
| 212 | 3.4.7.4 | Retest Profit Analysis | 3d | 2018-12-17 15:45 | 2018-12-19 14:45 | 147 | 0d |  | Paul Johnson; Christina Kutty | 30h | 1,275 |
| 213 | 3.4.7.5 | Perform User Acceptance Testing of Profit Analysis by Product Integrated Reporting | 3.5d | 2018-12-19 14:45 | 2018-12-21 16:15 | 212 | 0d |  | Paul Johnson; Christina Kutty | 35h | 1,487.5 |
| 214 | 3.4.7.6 | Receive QA sign off for Profit Analysis by Product Analysis | 0.2d | 2018-12-21 16:15 | 2018-12-25 08:15 | 213 | 0d |  | Paul Johnson; Christina Kutty; Rahul Jairaj | 3h | 123 |

| ID | WBS | Task | Duration | Start | Finish | Predecessors | Total slack | Free slack | Constraint | Resources | Work | Cost |
| --- | --- | --- | --- | --- | --- | --- | --- | --- | --- | --- | --- | --- |
| 215 | 3.4.8 | **Production Testing** | 17.87d | 2019-01-10 14:35 | 2019-01-25 15:55 |  | 5.8d |  |  |  | 108h | 4,585.5 |
| 216 | 3.4.8.1 | Perform testing of Sight Machine implementation on production environment | 2d | 2019-01-10 14:35 | 2019-01-11 16:35 | 150 | 23.08d |  |  | Christina Kutty; Paul Johnson | 20h | 850 |
| 217 | 3.4.8.2 | Perform testing of JobBoss integration on production environment | 2d | 2019-01-14 10:55 | 2019-01-15 13:55 | 151 | 20.42d |  |  | Paul Johnson; Christina Kutty | 20h | 850 |
| 218 | 3.4.8.3 | Perform testing on Product Cost Analysis on production environment | 1.5d | 2019-01-16 09:55 | 2019-01-17 09:25 | 152 | 17.92d |  |  | Christina Kutty; Paul Johnson | 15h | 637.5 |
| 219 | 3.4.8.4 | Perform testing on Employee Efficiency Analysis on production environment | 3d | 2019-01-21 16:55 | 2019-01-23 15:55 | 153 | 10.42d |  |  | Paul Johnson; Christina Kutty | 30h | 1,275 |
| 220 | 3.4.8.5 | Perform testing on Profit by Product Analysis on production environment | 2d | 2019-01-24 11:55 | 2019-01-25 14:55 | 154 | 0d |  |  | Christina Kutty; Paul Johnson | 20h | 850 |
| 221 | 3.4.8.6 | Get final QA sign off | 0.2d | 2019-01-25 14:55 | 2019-01-25 15:55 | 220 | 0d |  |  | Paul Johnson; Christina Kutty; Rahul Jairaj | 3h | 123 |
| 222 | 3.4.9 | Perform Integration, side-by-side and performance testing of all 3 Reporting structures | 4d | 2019-01-25 15:55 | 2019-01-30 10:55 | 221 | 0d |  |  | Paul Johnson; Christina Kutty | 40h | 1,700 |
| 223 | 4 | **Monitoring and Controlling** | 401.3d | 2018-02-02 13:00 | 2019-01-28 10:30 |  | 5.08d |  |  |  | 469.5h | 120,744 |
| 224 | 4.1 | **Perform payments to Sight Machine** | 399.38d | 2018-02-05 11:00 | 2019-01-25 16:55 |  | 5.6d |  |  |  | 37h | 107,910 |
| 225 | 4.1.1 | **Initial Payment to Sight Machine** | 132.7d | 2018-02-05 11:00 | 2018-06-01 10:30 |  | 65.35d |  |  |  | 1.5h | 10,038 |
| 226 | 4.1.1.1 | Receive approval for initial payment to Sight Machine | 0.1d | 2018-02-05 11:00 | 2018-02-05 11:30 | 20 | 200.27d | 132.5d |  | Rahul Jairaj; Greg Harrison | 1h | 19 |
| 227 | 4.1.1.2 | Perform Initial payment to Sight Machine | 0.1d | 2018-06-01 10:00 | 2018-06-01 10:30 | 226 | 67.77d | 0d | start no earlier than 2018-06-01 10:00 | Rahul Jairaj; Initial Payment to Sight Machine | 0.5h | 10,019 |
| 228 | 4.1.2 | **Perform payment to Sight Machine for Sensor installation** | 262.48d | 2018-06-05 16:30 | 2019-01-25 16:55 |  | 5.6d |  |  |  | 35.5h | 97,872 |
| 229 | 4.1.2.1 | **Payment for 1st phase** | 0.2d | 2018-06-05 16:30 | 2018-06-06 08:30 |  | 65.35d |  |  |  | 1.5h | 11,038 |
| 230 | 4.1.2.1.1 | Receive approval for paying Sight Machine for the 1st phase | 0.1d | 2018-06-05 16:30 | 2018-06-05 17:00 | 172 | 67.77d | 0d |  | Rahul Jairaj; Greg Harrison | 1h | 19 |
| 231 | 4.1.2.1.2 | Perform payment to Sight Machine for 1st phase of sensor implementation | 0.1d | 2018-06-06 08:00 | 2018-06-06 08:30 | 230 | 66.77d | 0d |  | Rahul Jairaj; CNC Machine Sensor Installation Payment 1 | 0.5h | 11,019 |
| 232 | 4.1.2.2 | **Payment for 2nd phase** | 0.2d | 2018-06-06 15:30 | 2018-06-06 16:30 |  | 65.35d |  |  |  | 1.5h | 11,038 |
| 233 | 4.1.2.2.1 | Receive approval for paying Sight Machine for the 2nd phase | 0.1d | 2018-06-06 15:30 | 2018-06-06 16:00 | 175 | 67.77d | 0d |  | Rahul Jairaj; Greg Harrison | 1h | 19 |
| 234 | 4.1.2.2.2 | Perform payment to Sight Machine for 2nd phase of sensor implementation | 0.1d | 2018-06-06 16:00 | 2018-06-06 16:30 | 233 | 67.77d | 0d |  | Rahul Jairaj; CNC Machine Sensor Installation Payment 2 | 0.5h | 11,019 |
| 235 | 4.1.2.3 | **Payment for 3rd phase** | 0.2d | 2018-06-07 14:30 | 2018-06-07 15:30 |  | 265.08d |  |  |  | 1.5h | 12,038 |
| 236 | 4.1.2.3.1 | Receive approval for paying Sight Machine for the 3rd phase | 0.1d | 2018-06-07 14:30 | 2018-06-07 15:00 | 178 | 266.5d | 0d |  | Rahul Jairaj; Greg Harrison | 1h | 19 |
| 237 | 4.1.2.3.2 | Perform payment to Sight Machine for 3rd phase of sensor implementation | 0.1d | 2018-06-07 15:00 | 2018-06-07 15:30 | 236 | 266.5d |  |  | Rahul Jairaj; CNC Machine Sensor Installation Payment 3 | 0.5h | 12,019 |
| 238 | 4.1.2.4 | **Payment for Sight Machine System Training** | 0.2d | 2019-01-09 08:15 | 2019-01-09 09:15 |  | 26.13d |  |  |  | 1.5h | 17,338 |
| 239 | 4.1.2.4.1 | Receive approval for paying Sight Machine Training | 0.1d | 2019-01-09 08:15 | 2019-01-09 08:45 | 90FS+3w, 92FS+1w | 27.55d | 0d |  | Rahul Jairaj; Greg Harrison | 1h | 19 |
| 240 | 4.1.2.4.2 | Perform payment to Sight Machine for training | 0.1d | 2019-01-09 08:45 | 2019-01-09 09:15 | 239 | 27.55d |  |  | Rahul Jairaj; Sight Machine Training | 0.5h | 17,319 |

| ID | WBS | Task | Duration | Start | Finish | Predecessors | Total slack | Free slack | Constraint | Resources | Work | Cost |
| --- | --- | --- | --- | --- | --- | --- | --- | --- | --- | --- | --- | --- |
| 241 | 4.1.2.5 | **Final Payment to Sight Machine** | 0.2d | 2019-01-25 15:55 | 2019-01-25 16:55 |  | 4.6d |  |  |  | 1.5h | 7,538 |
| 242 | 4.1.2.5.1 | Receive approval for paying final payment | 0.1d | 2019-01-25 15:55 | 2019-01-25 16:25 | 221 | 6.02d | 0d |  | Rahul Jairaj; Greg Harrison | 1h | 19 |
| 243 | 4.1.2.5.2 | Perform final payment to Sight Machine | 0.1d | 2019-01-25 16:25 | 2019-01-25 16:55 | 242 | 6.02d | 0d |  | Rahul Jairaj; UAT Signoff Payment | 0.5h | 7,519 |
| 244 | 4.1.2.6 | **Sight Machine Software Contract** | 237.8d | 2018-06-15 10:00 | 2019-01-15 16:00 |  | 18.58d |  |  |  | 16h | 28,304 |
| 245 | 4.1.2.6.1 | Sight Machine Software Contract 1 | 0.2d | 2018-06-15 10:00 | 2018-06-15 16:00 |  | 256.8d |  | start no earlier than 2018-06-15 10:00 | Rahul Jairaj; Greg Harrison; Sight Machine Software Contract | 2h | 3,538 |
| 246 | 4.1.2.6.2 | Sight Machine Software Contract 2 | 0.2d | 2018-07-13 10:00 | 2018-07-13 16:00 |  | 224.8d |  | start no earlier than 2018-07-13 10:00 | Rahul Jairaj; Greg Harrison; Sight Machine Software Contract | 2h | 3,538 |
| 247 | 4.1.2.6.3 | Sight Machine Software Contract 3 | 0.2d | 2018-08-15 10:00 | 2018-08-15 11:00 |  | 188.8d |  | start no earlier than 2018-08-15 10:00 | Rahul Jairaj; Greg Harrison; Sight Machine Software Contract | 2h | 3,538 |
| 248 | 4.1.2.6.4 | Sight Machine Software Contract 4 | 0.2d | 2018-09-14 10:00 | 2018-09-14 16:00 |  | 154.4d |  | start no earlier than 2018-09-14 10:00 | Rahul Jairaj; Greg Harrison; Sight Machine Software Contract | 2h | 3,538 |
| 249 | 4.1.2.6.5 | Sight Machine Software Contract 5 | 0.2d | 2018-10-15 10:00 | 2018-10-15 16:00 |  | 120.8d |  | start no earlier than 2018-10-15 10:00 | Rahul Jairaj; Greg Harrison; Sight Machine Software Contract | 2h | 3,538 |
| 250 | 4.1.2.6.6 | Sight Machine Software Contract 6 | 0.2d | 2018-11-15 10:00 | 2018-11-15 16:00 |  | 84d |  | start no earlier than 2018-11-15 10:00 | Rahul Jairaj; Greg Harrison; Sight Machine Software Contract | 2h | 3,538 |
| 251 | 4.1.2.6.7 | Sight Machine Software Contract 7 | 0.2d | 2018-12-14 10:00 | 2018-12-14 16:00 |  | 52d |  | start no earlier than 2018-12-14 10:00 | Rahul Jairaj; Greg Harrison; Sight Machine Software Contract | 2h | 3,538 |
| 252 | 4.1.2.6.8 | Sight Machine Software Contract 8 | 0.2d | 2019-01-15 10:00 | 2019-01-15 16:00 |  | 20d |  | start no earlier than 2019-01-15 10:00 | Rahul Jairaj; Greg Harrison; Sight Machine Software Contract | 2h | 3,538 |
| 253 | 4.1.2.7 | **Sight Machine Cloud Services Contract** | 168.2d | 2018-08-01 10:00 | 2019-01-01 11:00 |  | 35.38d |  |  |  | 12h | 10,578 |
| 254 | 4.1.2.7.1 | Sight Machine Cloud Services Contract 1 | 0.2d | 2018-08-01 10:00 | 2018-08-01 11:00 |  | 203.38d |  | start no earlier than 2018-08-01 10:00 | Rahul Jairaj; Greg Harrison; Sight Machine Cloud Contract | 2h | 1,763 |
| 255 | 4.1.2.7.2 | Sight Machine Cloud Services Contract 2 | 0.2d | 2018-08-31 10:00 | 2018-08-31 11:00 |  | 168.18d |  | start no earlier than 2018-08-31 10:00 | Rahul Jairaj; Greg Harrison; Sight Machine Cloud Contract | 2h | 1,763 |
| 256 | 4.1.2.7.3 | Sight Machine Cloud Services Contract 3 | 0.2d | 2018-10-01 10:00 | 2018-10-01 11:00 |  | 136.18d |  | start no earlier than 2018-10-01 10:00 | Rahul Jairaj; Greg Harrison; Sight Machine Cloud Contract | 2h | 1,763 |
| 257 | 4.1.2.7.4 | Sight Machine Cloud Services Contract 4 | 0.2d | 2018-11-01 10:00 | 2018-11-01 11:00 |  | 99.38d |  | start no earlier than 2018-11-01 10:00 | Rahul Jairaj; Greg Harrison; Sight Machine Cloud Contract | 2h | 1,763 |
| 258 | 4.1.2.7.5 | Sight Machine Cloud Services Contract 5 | 0.2d | 2018-11-30 10:00 | 2018-11-30 11:00 |  | 67.38d |  | start no earlier than 2018-11-30 10:00 | Rahul Jairaj; Greg Harrison; Sight Machine Cloud Contract | 2h | 1,763 |
| 259 | 4.1.2.7.6 | Sight Machine Cloud Services Contract 6 | 0.2d | 2019-01-01 10:00 | 2019-01-01 11:00 |  | 35.38d |  | start no earlier than 2019-01-01 10:00 | Rahul Jairaj; Greg Harrison; Sight Machine Cloud Contract | 2h | 1,763 |
| 260 | 4.2 | **Performance analysis and Review** | 2.1d | 2018-02-06 13:00 | 2018-02-07 15:30 |  | 401.08d |  |  |  | 19h | 657 |
| 261 | 4.2.1 | Set baseline and Key Performance Indicators | 0.6d | 2018-02-06 13:00 | 2018-02-06 16:00 | 47SS | 401.08d | 0d |  | Rahul Jairaj; Lamont Wilson; Christina Kutty | 9h | 372 |
| 262 | 4.2.2 | Compare time, cost, scope to baseline and document | 1d | 2018-02-06 16:00 | 2018-02-07 12:00 | 261 | 401.08d | 0d |  | Rahul Jairaj | 5h | 190 |
| 263 | 4.2.3 | Review progress of scopes | 0.5d | 2018-02-07 13:00 | 2018-02-07 15:30 | 262 | 401.08d |  |  | Rahul Jairaj; Greg Harrison | 5h | 95 |
| 264 | 4.3 | **Develop risk plans** | 0.6d | 2018-11-30 14:00 | 2018-12-03 08:00 |  | 66.38d |  |  |  | 11h | 448 |
| 265 | 4.3.1 | Document detailed risk and mitigation plans | 0.6d | 2018-11-30 14:00 | 2018-12-03 08:00 | 321, 327SF | 66.38d |  |  | Rahul Jairaj; Lamont Wilson; Christina Kutty | 9h | 372 |
| 266 | 4.3.2 | Have contingency plans for resources to reduce dependency | 0.4d | 2018-11-30 15:00 | 2018-12-03 08:00 | 321, 327SF | 66.38d |  |  | Rahul Jairaj | 2h | 76 |

| ID | WBS | Task | Duration | Start | Finish | Predecessors | Total slack | Free slack | Constraint | Resources | Work | Cost |
| --- | --- | --- | --- | --- | --- | --- | --- | --- | --- | --- | --- | --- |
| 267 | 4.4 | **Hold meetings** | 401.3d | 2018-02-02 13:00 | 2019-01-28 10:30 |  | 5.08d |  |  |  | 402.5h | 11,729 |
| 268 | 4.4.1 | **Executive Summary on the Project** | 78.35d | 2018-02-02 13:00 | 2018-04-12 11:45 |  | 328.03d |  |  |  | 8.75h | 180.5 |
| 269 | 4.4.1.1 | Prepare the executive summary for the project | 0.6d | 2018-02-02 13:00 | 2018-02-02 16:00 | 14 | 405.78d |  |  | Rahul Jairaj | 3h | 114 |
| 270 | 4.4.1.2 | Present the executive summary | 0.15d | 2018-04-12 10:00 | 2018-04-12 10:45 |  | 328.03d | 0d | start no earlier than 2018-04-12 10:00 | Rahul Jairaj | 0.75h | 28.5 |
| 271 | 4.4.1.3 | Receive approval for the executive summary | 0.2d | 2018-04-12 10:45 | 2018-04-12 11:45 | 270 | 328.03d |  |  | Rahul Jairaj; Greg Harrison; Doug Coster; Mat Jackson; Norma Wilson | 5h | 38 |
| 272 | 4.4.2 | **Detailed Schedule Meeting of the Project** | 111.95d | 2018-02-02 13:00 | 2018-05-11 11:45 |  | 111.6d |  |  |  | 8.75h | 180.5 |
| 273 | 4.4.2.1 | Prepare the detailed budget meeting for the project | 0.6d | 2018-02-02 13:00 | 2018-02-02 16:00 | 14 | 405.78d |  |  | Rahul Jairaj | 3h | 114 |
| 274 | 4.4.2.2 | Present the detailed budget meeting | 0.15d | 2018-05-11 10:00 | 2018-05-11 10:45 |  | 0d |  | start no earlier than 2018-05-11 10:00 | Rahul Jairaj | 0.75h | 28.5 |
| 275 | 4.4.2.3 | Receive approval for the detailed budget meeting | 0.2d | 2018-05-11 10:45 | 2018-05-11 11:45 | 274 | 0d |  |  | Rahul Jairaj; Norma Wilson; Greg Harrison; Doug Coster; Mat Jackson | 5h | 38 |
| 276 | 4.4.3 | **Change Control Meetings** | 206.8d | 2018-06-05 10:00 | 2018-12-05 12:00 |  | 62.38d |  |  |  | 70h | 2,254 |
| 277 | 4.4.3.1 | Change Control Meetings 1 | 0.4d | 2018-06-05 10:00 | 2018-06-05 12:00 |  | 268.78d |  | start no earlier than 2018-06-05 10:00 | Rahul Jairaj; Lamont Wilson; Christina Kutty; Krishnanand Naik; Greg Harrison | 10h | 322 |
| 278 | 4.4.3.2 | Change Control Meetings 2 | 0.4d | 2018-07-05 10:00 | 2018-07-05 12:00 |  | 233.58d |  | start no earlier than 2018-07-05 10:00 | Rahul Jairaj; Lamont Wilson; Christina Kutty; Krishnanand Naik; Greg Harrison | 10h | 322 |
| 279 | 4.4.3.3 | Change Control Meetings 3 | 0.4d | 2018-08-06 08:00 | 2018-08-06 10:00 |  | 198.78d |  | start no earlier than 2018-08-05 10:00 | Rahul Jairaj; Lamont Wilson; Christina Kutty; Krishnanand Naik; Greg Harrison | 10h | 322 |
| 280 | 4.4.3.4 | Change Control Meetings 4 | 0.4d | 2018-09-05 10:00 | 2018-09-05 12:00 |  | 164.78d |  | start no earlier than 2018-09-05 10:00 | Rahul Jairaj; Lamont Wilson; Christina Kutty; Krishnanand Naik; Greg Harrison | 10h | 322 |
| 281 | 4.4.3.5 | Change Control Meetings 5 | 0.4d | 2018-10-05 10:00 | 2018-10-05 12:00 |  | 129.58d |  | start no earlier than 2018-10-05 10:00 | Rahul Jairaj; Lamont Wilson; Christina Kutty; Krishnanand Naik; Greg Harrison | 10h | 322 |
| 282 | 4.4.3.6 | Change Control Meetings 6 | 0.4d | 2018-11-05 10:00 | 2018-11-05 12:00 |  | 95.98d |  | start no earlier than 2018-11-05 10:00 | Rahul Jairaj; Lamont Wilson; Christina Kutty; Krishnanand Naik; Greg Harrison | 10h | 322 |
| 283 | 4.4.3.7 | Change Control Meetings 7 | 0.4d | 2018-12-05 10:00 | 2018-12-05 12:00 |  | 62.38d |  | start no earlier than 2018-12-05 10:00 | Rahul Jairaj; Lamont Wilson; Christina Kutty; Krishnanand Naik; Greg Harrison | 10h | 322 |
| 284 | 4.4.4 | **Status Meetings** | 265.7d | 2018-06-04 10:00 | 2019-01-28 10:30 |  | 5.08d |  |  |  | 140h | 5,740 |
| 285 | 4.4.4.1 | Status Meetings 1 | 0.1d | 2018-06-04 10:00 | 2018-06-04 10:30 |  | 270.68d |  | start no earlier than 2018-06-04 10:00 | Rahul Jairaj; Lamont Wilson; Christina Kutty; Krishnanand Naik; June Presten; Yi Wang; Mary Gibson; Paul Johnson | 4h | 164 |
| 286 | 4.4.4.2 | Status Meetings 2 | 0.1d | 2018-06-11 10:00 | 2018-06-11 10:30 |  | 262.68d |  | start no earlier than 2018-06-11 10:00 | Rahul Jairaj; Lamont Wilson; Christina Kutty; Krishnanand Naik; June Presten; Yi Wang; Mary Gibson; Paul Johnson | 4h | 164 |
| 287 | 4.4.4.3 | Status Meetings 3 | 0.1d | 2018-06-18 10:00 | 2018-06-18 10:30 |  | 254.68d |  | start no earlier than 2018-06-18 10:00 | Rahul Jairaj; Lamont Wilson; Christina Kutty; Krishnanand Naik; June Presten; Yi Wang; Mary Gibson; Paul Johnson | 4h | 164 |
| 288 | 4.4.4.4 | Status Meetings 4 | 0.1d | 2018-06-25 10:00 | 2018-06-25 10:30 |  | 246.68d |  | start no earlier than 2018-06-25 10:00 | Rahul Jairaj; Lamont Wilson; Christina Kutty; Krishnanand Naik; June Presten; Yi Wang; Mary Gibson; Paul Johnson | 4h | 164 |
| 289 | 4.4.4.5 | Status Meetings 5 | 0.1d | 2018-07-02 10:00 | 2018-07-02 10:30 |  | 238.68d |  | start no earlier than 2018-07-02 10:00 | Rahul Jairaj; Lamont Wilson; Christina Kutty; Krishnanand Naik; June Presten; Yi Wang; Mary Gibson; Paul Johnson | 4h | 164 |
| 290 | 4.4.4.6 | Status Meetings 6 | 0.1d | 2018-07-09 10:00 | 2018-07-09 10:30 |  | 230.68d |  | start no earlier than 2018-07-09 10:00 | Rahul Jairaj; Lamont Wilson; Christina Kutty; Krishnanand Naik; June Presten; Yi Wang; Mary Gibson; Paul Johnson | 4h | 164 |
| 291 | 4.4.4.7 | Status Meetings 7 | 0.1d | 2018-07-16 10:00 | 2018-07-16 10:30 |  | 222.68d |  | start no earlier than 2018-07-16 10:00 | Rahul Jairaj; Lamont Wilson; Christina Kutty; Krishnanand Naik; June Presten; Yi Wang; Mary Gibson; Paul Johnson | 4h | 164 |
| 292 | 4.4.4.8 | Status Meetings 8 | 0.1d | 2018-07-23 10:00 | 2018-07-23 10:30 |  | 214.68d |  | start no earlier than 2018-07-23 10:00 | Rahul Jairaj; Lamont Wilson; Christina Kutty; Krishnanand Naik; June Presten; Yi Wang; Mary Gibson; Paul Johnson | 4h | 164 |
| 293 | 4.4.4.9 | Status Meetings 9 | 0.1d | 2018-07-30 10:00 | 2018-07-30 10:30 |  | 206.68d |  | start no earlier than 2018-07-30 10:00 | Rahul Jairaj; Lamont Wilson; Christina Kutty; Krishnanand Naik; June Presten; Yi Wang; Mary Gibson; Paul Johnson | 4h | 164 |
| 294 | 4.4.4.10 | Status Meetings 10 | 0.1d | 2018-08-06 10:00 | 2018-08-06 10:30 |  | 198.68d |  | start no earlier than 2018-08-06 10:00 | Rahul Jairaj; Lamont Wilson; Christina Kutty; Krishnanand Naik; June Presten; Yi Wang; Mary Gibson; Paul Johnson | 4h | 164 |
| 295 | 4.4.4.11 | Status Meetings 11 | 0.1d | 2018-08-13 10:00 | 2018-08-13 10:30 |  | 190.68d |  | start no earlier than 2018-08-13 10:00 | Rahul Jairaj; Lamont Wilson; Christina Kutty; Krishnanand Naik; June Presten; Yi Wang; Mary Gibson; Paul Johnson | 4h | 164 |
| 296 | 4.4.4.12 | Status Meetings 12 | 0.1d | 2018-08-20 10:00 | 2018-08-20 10:30 |  | 182.68d |  | start no earlier than 2018-08-20 10:00 | Rahul Jairaj; Lamont Wilson; Christina Kutty; Krishnanand Naik; June Presten; Yi Wang; Mary Gibson; Paul Johnson | 4h | 164 |
| 297 | 4.4.4.13 | Status Meetings 13 | 0.1d | 2018-08-27 10:00 | 2018-08-27 10:30 |  | 174.68d |  | start no earlier than 2018-08-27 10:00 | Rahul Jairaj; Lamont Wilson; Christina Kutty; Krishnanand Naik; June Presten; Yi Wang; Mary Gibson; Paul Johnson | 4h | 164 |
| 298 | 4.4.4.14 | Status Meetings 14 | 0.1d | 2018-09-04 08:00 | 2018-09-04 08:30 |  | 167.08d |  | start no earlier than 2018-09-03 10:00 | Rahul Jairaj; Lamont Wilson; Christina Kutty; Krishnanand Naik; June Presten; Yi Wang; Mary Gibson; Paul Johnson | 4h | 164 |
| 299 | 4.4.4.15 | Status Meetings 15 | 0.1d | 2018-09-10 10:00 | 2018-09-10 10:30 |  | 160.28d |  | start no earlier than 2018-09-10 10:00 | Rahul Jairaj; Lamont Wilson; Christina Kutty; Krishnanand Naik; June Presten; Yi Wang; Mary Gibson; Paul Johnson | 4h | 164 |
| 300 | 4.4.4.16 | Status Meetings 16 | 0.1d | 2018-09-17 10:00 | 2018-09-17 10:30 |  | 152.28d |  | start no earlier than 2018-09-17 10:00 | Rahul Jairaj; Lamont Wilson; Christina Kutty; Krishnanand Naik; June Presten; Yi Wang; Mary Gibson; Paul Johnson | 4h | 164 |
| 301 | 4.4.4.17 | Status Meetings 17 | 0.1d | 2018-09-24 10:00 | 2018-09-24 10:30 |  | 144.28d |  | start no earlier than 2018-09-24 10:00 | Rahul Jairaj; Lamont Wilson; Christina Kutty; Krishnanand Naik; June Presten; Yi Wang; Mary Gibson; Paul Johnson | 4h | 164 |
| 302 | 4.4.4.18 | Status Meetings 18 | 0.1d | 2018-10-01 10:00 | 2018-10-01 10:30 |  | 136.28d |  | start no earlier than 2018-10-01 10:00 | Rahul Jairaj; Lamont Wilson; Christina Kutty; Krishnanand Naik; June Presten; Yi Wang; Mary Gibson; Paul Johnson | 4h | 164 |
| 303 | 4.4.4.19 | Status Meetings 19 | 0.1d | 2018-10-08 10:00 | 2018-10-08 10:30 |  | 128.28d |  | start no earlier than 2018-10-08 10:00 | Rahul Jairaj; Lamont Wilson; Christina Kutty; Krishnanand Naik; June Presten; Yi Wang; Mary Gibson; Paul Johnson | 4h | 164 |
| 304 | 4.4.4.20 | Status Meetings 20 | 0.1d | 2018-10-15 10:00 | 2018-10-15 10:30 |  | 120.28d |  | start no earlier than 2018-10-15 10:00 | Rahul Jairaj; Lamont Wilson; Christina Kutty; Krishnanand Naik; June Presten; Yi Wang; Mary Gibson; Paul Johnson | 4h | 164 |
| 305 | 4.4.4.21 | Status Meetings 21 | 0.1d | 2018-10-22 10:00 | 2018-10-22 10:30 |  | 112.28d |  | start no earlier than 2018-10-22 10:00 | Rahul Jairaj; Lamont Wilson; Christina Kutty; Krishnanand Naik; June Presten; Yi Wang; Mary Gibson; Paul Johnson | 4h | 164 |
| 306 | 4.4.4.22 | Status Meetings 22 | 0.1d | 2018-10-29 10:00 | 2018-10-29 10:30 |  | 104.28d |  | start no earlier than 2018-10-29 10:00 | Rahul Jairaj; Lamont Wilson; Christina Kutty; Krishnanand Naik; June Presten; Yi Wang; Mary Gibson; Paul Johnson | 4h | 164 |
| 307 | 4.4.4.23 | Status Meetings 23 | 0.1d | 2018-11-05 10:00 | 2018-11-05 10:30 |  | 96.28d |  | start no earlier than 2018-11-05 10:00 | Rahul Jairaj; Lamont Wilson; Christina Kutty; Krishnanand Naik; June Presten; Yi Wang; Mary Gibson; Paul Johnson | 4h | 164 |
| 308 | 4.4.4.24 | Status Meetings 24 | 0.1d | 2018-11-12 10:00 | 2018-11-12 10:30 |  | 88.28d |  | start no earlier than 2018-11-12 10:00 | Rahul Jairaj; Lamont Wilson; Christina Kutty; Krishnanand Naik; June Presten; Yi Wang; Mary Gibson; Paul Johnson | 4h | 164 |
| 309 | 4.4.4.25 | Status Meetings 25 | 0.1d | 2018-11-19 10:00 | 2018-11-19 10:30 |  | 80.28d |  | start no earlier than 2018-11-19 10:00 | Rahul Jairaj; Lamont Wilson; Christina Kutty; Krishnanand Naik; June Presten; Yi Wang; Mary Gibson; Paul Johnson | 4h | 164 |
| 310 | 4.4.4.26 | Status Meetings 26 | 0.1d | 2018-11-26 10:00 | 2018-11-26 10:30 |  | 73.88d |  | start no earlier than 2018-11-26 10:00 | Rahul Jairaj; Lamont Wilson; Christina Kutty; Krishnanand Naik; June Presten; Yi Wang; Mary Gibson; Paul Johnson | 4h | 164 |
| 311 | 4.4.4.27 | Status Meetings 27 | 0.1d | 2018-12-03 10:00 | 2018-12-03 10:30 |  | 65.88d |  | start no earlier than 2018-12-03 10:00 | Rahul Jairaj; Lamont Wilson; Christina Kutty; Krishnanand Naik; June Presten; Yi Wang; Mary Gibson; Paul Johnson | 4h | 164 |
| 312 | 4.4.4.28 | Status Meetings 28 | 0.1d | 2018-12-10 10:00 | 2018-12-10 10:30 |  | 57.88d |  | start no earlier than 2018-12-10 10:00 | Rahul Jairaj; Lamont Wilson; Christina Kutty; Krishnanand Naik; June Presten; Yi Wang; Mary Gibson; Paul Johnson | 4h | 164 |
| 313 | 4.4.4.29 | Status Meetings 29 | 0.1d | 2018-12-17 10:00 | 2018-12-17 10:30 |  | 49.88d |  | start no earlier than 2018-12-17 10:00 | Rahul Jairaj; Lamont Wilson; Christina Kutty; Krishnanand Naik; June Presten; Yi Wang; Mary Gibson; Paul Johnson | 4h | 164 |
| 314 | 4.4.4.30 | Status Meetings 30 | 0.1d | 2018-12-25 08:00 | 2018-12-25 08:30 |  | 42.28d |  | start no earlier than 2018-12-24 10:00 | Rahul Jairaj; Lamont Wilson; Christina Kutty; Krishnanand Naik; June Presten; Yi Wang; Mary Gibson; Paul Johnson | 4h | 164 |
| 315 | 4.4.4.31 | Status Meetings 31 | 0.1d | 2019-01-01 08:00 | 2019-01-01 08:30 |  | 35.88d |  | start no earlier than 2018-12-31 10:00 | Rahul Jairaj; Lamont Wilson; Christina Kutty; Krishnanand Naik; June Presten; Yi Wang; Mary Gibson; Paul Johnson | 4h | 164 |
| 316 | 4.4.4.32 | Status Meetings 32 | 0.1d | 2019-01-07 10:00 | 2019-01-07 10:30 |  | 29.08d |  | start no earlier than 2019-01-07 10:00 | Rahul Jairaj; Lamont Wilson; Christina Kutty; Krishnanand Naik; June Presten; Yi Wang; Mary Gibson; Paul Johnson | 4h | 164 |
| 317 | 4.4.4.33 | Status Meetings 33 | 0.1d | 2019-01-14 10:00 | 2019-01-14 10:30 |  | 21.08d |  | start no earlier than 2019-01-14 10:00 | Rahul Jairaj; Lamont Wilson; Christina Kutty; Krishnanand Naik; June Presten; Yi Wang; Mary Gibson; Paul Johnson | 4h | 164 |
| 318 | 4.4.4.34 | Status Meetings 34 | 0.1d | 2019-01-21 10:00 | 2019-01-21 10:30 |  | 13.08d |  | start no earlier than 2019-01-21 10:00 | Rahul Jairaj; Lamont Wilson; Christina Kutty; Krishnanand Naik; June Presten; Yi Wang; Mary Gibson; Paul Johnson | 4h | 164 |
| 319 | 4.4.4.35 | Status Meetings 35 | 0.1d | 2019-01-28 10:00 | 2019-01-28 10:30 |  | 5.08d |  | start no earlier than 2019-01-28 10:00 | Rahul Jairaj; Lamont Wilson; Christina Kutty; Krishnanand Naik; June Presten; Yi Wang; Mary Gibson; Paul Johnson | 4h | 164 |

| ID | WBS | Task | Duration | Start | Finish | Total slack | Constraint | Resources | Work | Cost |
| --- | --- | --- | --- | --- | --- | --- | --- | --- | --- | --- |
| 320 | 4.4.5 | **Risk Meetings** | 206.4d | 2018-06-01 10:00 | 2018-12-03 10:00 | 65.98d |  |  | 42h | 1,736 |
| 321 | 4.4.5.1 | Risk Meetings 1 | 0.4d | 2018-06-01 10:00 | 2018-06-01 12:00 | 271.98d | start no earlier than 2018-06-01 10:00 | Rahul Jairaj; Lamont Wilson; Christina Kutty | 6h | 248 |
| 322 | 4.4.5.2 | Risk Meetings 2 | 0.4d | 2018-07-02 08:00 | 2018-07-02 10:00 | 238.78d | start no earlier than 2018-07-01 10:00 | Rahul Jairaj; Lamont Wilson; Christina Kutty | 6h | 248 |
| 323 | 4.4.5.3 | Risk Meetings 3 | 0.4d | 2018-08-01 10:00 | 2018-08-01 12:00 | 203.18d | start no earlier than 2018-08-01 10:00 | Rahul Jairaj; Lamont Wilson; Christina Kutty | 6h | 248 |
| 324 | 4.4.5.4 | Risk Meetings 4 | 0.4d | 2018-09-04 08:00 | 2018-09-04 10:00 | 166.78d | start no earlier than 2018-09-01 10:00 | Rahul Jairaj; Lamont Wilson; Christina Kutty | 6h | 248 |
| 325 | 4.4.5.5 | Risk Meetings 5 | 0.4d | 2018-10-01 10:00 | 2018-10-01 12:00 | 135.98d | start no earlier than 2018-10-01 10:00 | Rahul Jairaj; Lamont Wilson; Christina Kutty | 6h | 248 |
| 326 | 4.4.5.6 | Risk Meetings 6 | 0.4d | 2018-11-01 10:00 | 2018-11-01 12:00 | 99.18d | start no earlier than 2018-11-01 10:00 | Rahul Jairaj; Lamont Wilson; Christina Kutty | 6h | 248 |
| 327 | 4.4.5.7 | Risk Meetings 7 | 0.4d | 2018-12-03 08:00 | 2018-12-03 10:00 | 65.98d | start no earlier than 2018-12-01 10:00 | Rahul Jairaj; Lamont Wilson; Christina Kutty | 6h | 248 |
| 328 | 4.4.6 | **Sight Machine link up meetings** | 238.2d | 2018-06-20 10:00 | 2019-01-21 09:00 | 13.38d |  |  | 48h | 992 |
| 329 | 4.4.6.1 | Sight Machine link up meetings 1 | 0.2d | 2018-06-20 10:00 | 2018-06-20 11:00 | 251.38d | start no earlier than 2018-06-20 10:00 | Rahul Jairaj; Lamont Wilson; Christina Kutty; Curtis Kellman; Kurt DeMaagd; Ryan Smith | 6h | 124 |
| 330 | 4.4.6.2 | Sight Machine link up meetings 2 | 0.2d | 2018-07-20 10:00 | 2018-07-20 11:00 | 216.18d | start no earlier than 2018-07-20 10:00 | Rahul Jairaj; Lamont Wilson; Christina Kutty; Curtis Kellman; Kurt DeMaagd; Ryan Smith | 6h | 124 |
| 331 | 4.4.6.3 | Sight Machine link up meetings 3 | 0.2d | 2018-08-20 10:00 | 2018-08-20 11:00 | 182.58d | start no earlier than 2018-08-20 10:00 | Rahul Jairaj; Lamont Wilson; Christina Kutty; Curtis Kellman; Kurt DeMaagd; Ryan Smith | 6h | 124 |
| 332 | 4.4.6.4 | Sight Machine link up meetings 4 | 0.2d | 2018-09-20 10:00 | 2018-09-20 11:00 | 147.38d | start no earlier than 2018-09-20 10:00 | Rahul Jairaj; Lamont Wilson; Christina Kutty; Curtis Kellman; Kurt DeMaagd; Ryan Smith | 6h | 124 |
| 333 | 4.4.6.5 | Sight Machine link up meetings 5 | 0.2d | 2018-10-22 08:00 | 2018-10-22 09:00 | 112.58d | start no earlier than 2018-10-20 10:00 | Rahul Jairaj; Lamont Wilson; Christina Kutty; Curtis Kellman; Kurt DeMaagd; Ryan Smith | 6h | 124 |
| 334 | 4.4.6.6 | Sight Machine link up meetings 6 | 0.2d | 2018-11-20 10:00 | 2018-11-20 11:00 | 78.58d | start no earlier than 2018-11-20 10:00 | Rahul Jairaj; Lamont Wilson; Christina Kutty; Curtis Kellman; Kurt DeMaagd; Ryan Smith | 6h | 124 |
| 335 | 4.4.6.7 | Sight Machine link up meetings 7 | 0.2d | 2018-12-20 10:00 | 2018-12-20 11:00 | 44.98d | start no earlier than 2018-12-20 10:00 | Rahul Jairaj; Lamont Wilson; Christina Kutty; Curtis Kellman; Kurt DeMaagd; Ryan Smith | 6h | 124 |
| 336 | 4.4.6.8 | Sight Machine link up meetings 8 | 0.2d | 2019-01-21 08:00 | 2019-01-21 09:00 | 13.38d | start no earlier than 2019-01-20 10:00 | Rahul Jairaj; Lamont Wilson; Christina Kutty; Curtis Kellman; Kurt DeMaagd; Ryan Smith | 6h | 124 |
| 337 | 4.4.7 | **Upper Management Update** | 249.8d | 2018-06-07 10:00 | 2019-01-17 11:00 | 16.18d |  |  | 85h | 646 |
| 338 | 4.4.7.1 | Upper Management Update 1 | 0.2d | 2018-06-07 10:00 | 2018-06-07 11:00 | 265.78d | start no earlier than 2018-06-07 10:00 | Rahul Jairaj; Greg Harrison; Doug Coster; Norma Wilson; Mat Jackson | 5h | 38 |
| 339 | 4.4.7.2 | Upper Management Update 2 | 0.2d | 2018-06-21 10:00 | 2018-06-21 11:00 | 249.78d | start no earlier than 2018-06-21 10:00 | Rahul Jairaj; Greg Harrison; Doug Coster; Norma Wilson; Mat Jackson | 5h | 38 |
| 340 | 4.4.7.3 | Upper Management Update 3 | 0.2d | 2018-07-05 10:00 | 2018-07-05 11:00 | 233.78d | start no earlier than 2018-07-05 10:00 | Rahul Jairaj; Greg Harrison; Doug Coster; Norma Wilson; Mat Jackson | 5h | 38 |
| 341 | 4.4.7.4 | Upper Management Update 4 | 0.2d | 2018-07-19 10:00 | 2018-07-19 11:00 | 217.78d | start no earlier than 2018-07-19 10:00 | Rahul Jairaj; Greg Harrison; Doug Coster; Norma Wilson; Mat Jackson | 5h | 38 |
| 342 | 4.4.7.5 | Upper Management Update 5 | 0.2d | 2018-08-02 10:00 | 2018-08-02 11:00 | 201.78d | start no earlier than 2018-08-02 10:00 | Rahul Jairaj; Greg Harrison; Doug Coster; Norma Wilson; Mat Jackson | 5h | 38 |
| 343 | 4.4.7.6 | Upper Management Update 6 | 0.2d | 2018-08-16 10:00 | 2018-08-16 11:00 | 185.78d | start no earlier than 2018-08-16 10:00 | Rahul Jairaj; Greg Harrison; Doug Coster; Norma Wilson; Mat Jackson | 5h | 38 |
| 344 | 4.4.7.7 | Upper Management Update 7 | 0.2d | 2018-08-30 10:00 | 2018-08-30 11:00 | 169.78d | start no earlier than 2018-08-30 10:00 | Rahul Jairaj; Greg Harrison; Doug Coster; Norma Wilson; Mat Jackson | 5h | 38 |
| 345 | 4.4.7.8 | Upper Management Update 8 | 0.2d | 2018-09-13 10:00 | 2018-09-13 11:00 | 155.38d | start no earlier than 2018-09-13 10:00 | Rahul Jairaj; Greg Harrison; Doug Coster; Norma Wilson; Mat Jackson | 5h | 38 |
| 346 | 4.4.7.9 | Upper Management Update 9 | 0.2d | 2018-09-27 10:00 | 2018-09-27 11:00 | 139.38d | start no earlier than 2018-09-27 10:00 | Rahul Jairaj; Greg Harrison; Doug Coster; Norma Wilson; Mat Jackson | 5h | 38 |
| 347 | 4.4.7.10 | Upper Management Update 10 | 0.2d | 2018-10-11 10:00 | 2018-10-11 11:00 | 123.38d | start no earlier than 2018-10-11 10:00 | Rahul Jairaj; Greg Harrison; Doug Coster; Norma Wilson; Mat Jackson | 5h | 38 |
| 348 | 4.4.7.11 | Upper Management Update 11 | 0.2d | 2018-10-25 10:00 | 2018-10-25 11:00 | 107.38d | start no earlier than 2018-10-25 10:00 | Rahul Jairaj; Greg Harrison; Doug Coster; Norma Wilson; Mat Jackson | 5h | 38 |
| 349 | 4.4.7.12 | Upper Management Update 12 | 0.2d | 2018-11-08 10:00 | 2018-11-08 11:00 | 91.38d | start no earlier than 2018-11-08 10:00 | Rahul Jairaj; Greg Harrison; Doug Coster; Norma Wilson; Mat Jackson | 5h | 38 |
| 350 | 4.4.7.13 | Upper Management Update 13 | 0.2d | 2018-11-23 08:00 | 2018-11-23 09:00 | 75.78d | start no earlier than 2018-11-22 10:00 | Rahul Jairaj; Greg Harrison; Doug Coster; Norma Wilson; Mat Jackson | 5h | 38 |
| 351 | 4.4.7.14 | Upper Management Update 14 | 0.2d | 2018-12-06 10:00 | 2018-12-06 11:00 | 60.98d | start no earlier than 2018-12-06 10:00 | Rahul Jairaj; Greg Harrison; Doug Coster; Norma Wilson; Mat Jackson | 5h | 38 |
| 352 | 4.4.7.15 | Upper Management Update 15 | 0.2d | 2018-12-20 10:00 | 2018-12-20 11:00 | 44.98d | start no earlier than 2018-12-20 10:00 | Rahul Jairaj; Greg Harrison; Doug Coster; Norma Wilson; Mat Jackson | 5h | 38 |
| 353 | 4.4.7.16 | Upper Management Update 16 | 0.2d | 2019-01-03 10:00 | 2019-01-03 11:00 | 32.18d | start no earlier than 2019-01-03 10:00 | Rahul Jairaj; Greg Harrison; Doug Coster; Norma Wilson; Mat Jackson | 5h | 38 |
| 354 | 4.4.7.17 | Upper Management Update 17 | 0.2d | 2019-01-17 10:00 | 2019-01-17 11:00 | 16.18d | start no earlier than 2019-01-17 10:00 | Rahul Jairaj; Greg Harrison; Doug Coster; Norma Wilson; Mat Jackson | 5h | 38 |

| ID | WBS | Task | Duration | Start | Finish | Predecessors | Total slack | Resources | Work | Cost |
| --- | --- | --- | --- | --- | --- | --- | --- | --- | --- | --- |
| 355 | 5 | **Closing** | 5.6d | 2019-01-25 16:55 | 2019-01-31 11:55 |  | 0d |  | 45h | 1,406 |
| 356 | 5.1 | Review team's performance and conduct appraisals based on performance | 0.2d | 2019-01-30 10:55 | 2019-01-30 11:55 | 222 | 0d | Rahul Jairaj; Lamont Wilson; Yi Wang; June Presten; Krishnanand Naik; Christina Kutty; Paul Johnson; Mary Gibson | 8h | 328 |
| 357 | 5.2 | Get review from stakeholders on performance of project | 0.2d | 2019-01-30 11:55 | 2019-01-30 13:55 | 356 | 0d | Rahul Jairaj; Greg Harrison; Norma Wilson; Doug Coster | 4h | 38 |
| 358 | 5.3 | Prepare final document of all finally completed deliverables | 0.4d | 2019-01-30 13:55 | 2019-01-30 15:55 | 357 | 0d | Rahul Jairaj; Lamont Wilson | 4h | 156 |
| 359 | 5.4 | Close the contract | 1d | 2019-01-25 16:55 | 2019-01-28 13:55 | 243 | 4.6d | Rahul Jairaj; Greg Harrison | 10h | 190 |
| 360 | 5.5 | Conduct Retrospective meeting and reflect on lessons learnt | 0.4d | 2019-01-31 08:55 | 2019-01-31 10:55 | 156 | 0d | Rahul Jairaj; Lamont Wilson; June Presten; Krishnanand Naik; Yi Wang; Mary Gibson; Christina Kutty; Paul Johnson | 16h | 656 |
| 361 | 5.6 | Close the project | 0.2d | 2019-01-31 10:55 | 2019-01-31 11:55 | 360 | 0d | Rahul Jairaj; Greg Harrison; Doug Coster | 3h | 38 |
